Schedule from MS Project, 2024-01-01 to 2027-07-26, costs in $.

## Calendars

- Standard: Mon-Fri 08:00-12:00, 13:00-17:00; Sat-Sun off.

## Resources

| Resource | Unit | Rate |
| --- | --- | --- |
| Italian Specialized Engineer |  | 120 |
| Italian Project Engineer |  | 140 |
| Indian Specialized Engineer |  | 60 |
| Indian Project Engineer |  | 70 |
| Purchasing agent |  | 70 |
| Team of Italian workers (4 workers each) |  | 320 |
| Team of Indian workers (4 workers each) |  | 65 |
| Single-spindle CNC machine | unit | 340000 |
| Double-spindle CNC machine | unit | 500000 |
| Intermediate washing station | unit | 530000 |
| Final washing station | unit | 970000 |
| Drilling machine | unit | 270000 |
| Assembly station | unit | 1100000 |
| Manipulator | unit | 11000 |
| Gantry loader (including robots) | unit | 96000 |
| Powered conveyor | meter | 2500 |
| Rotating table | unit | 16000 |
| Overhead conveyor | meter | 5400 |
| Lift/lower component | unit | 16200 |
| Train - From India - per TEU | TEU | 360 |
| Ship - From Germany - per TEU | TEU | 700 |
| Ship - Fom Italy - per TEU | TEU | 479 |
| Team of italian workers (4 workers each) - crash |  | 640 |
| Team of Indian workers (4 workers each)-crash |  | 130 |
| OH crash |  | 125 |
| OH |  | 150 |
| Functional Managers IT |  | 120 |
| Functional Professionals IT |  | 100 |
| Change management specialist |  | 120 |
| HR Employee IT |  | 80 |
| Financial Head |  | 200 |
| CTO |  | 200 |
| HR Head |  | 180 |
| CEO IT |  | 300 |
| Manufacturing Head |  | 140 |
| Business Analyst IT |  | 150 |
| Project Manager/Director |  | 150 |
| Vice CEO |  | 250 |
| Manufacturing Employee |  | 80 |
| Finance Employee |  | 100 |
| Technical Employee |  | 80 |
| IT Specialist it |  | 140 |
| OH3 |  | 37.5 |
| ERP Professional IN |  | 120 |
| ERP Expert IT |  | 140 |
| Information Technology IN |  | 120 |
| Human Resources IN |  | 60 |
| CEO IN |  | 300 |
| Functional Managers IN |  | 100 |
| Functional Professionals IN |  | 80 |

## Schedule

| ID | WBS | Task | Duration | Start | Finish | Predecessors | Total slack | Free slack | Resources | Work | Cost |
| --- | --- | --- | --- | --- | --- | --- | --- | --- | --- | --- | --- |
| 1 | 1 | **Construction** | 583d | 2024-01-01 | 2026-03-25 |  | 0d |  | OH | 57080h | 25,970,113 |
| 2 | 1.1 | **Design and Planning** | 272d | 2024-01-01 | 2025-01-14 |  | 0d |  |  | 17664h | 1,740,800 |
| 3 | 1.1.1 | **phase 1** | 174d | 2024-01-01 | 2024-08-29 |  | 0d |  |  | 8832h | 870,400 |
| 4 | 1.1.1.1 | Detailed Engineering - Process | 832h | 2024-01-01 | 2024-05-23 |  | 0d |  | Italian Project Engineer [200%]; Italian Specialized Engineer [400%] | 4992h | 632,320 |
| 5 | 1.1.1.2 | Detailed Engineering - Layout | 768h | 2024-04-18 | 2024-08-29 | 4FS-208h | 658.5d | 0d | Indian Specialized Engineer [400%]; Indian Project Engineer | 3840h | 238,080 |
| 6 | 1.1.2 | **phase 2** | 168d | 2024-05-24 | 2025-01-14 |  | 658.5d |  |  | 8832h | 870,400 |
| 7 | 1.1.2.1 | Detailed Engineering - Process | 832h | 2024-05-24 | 2024-10-16 | 4 | 687.5d | 0d | Italian Project Engineer [200%]; Italian Specialized Engineer [400%] | 4992h | 632,320 |
| 8 | 1.1.2.2 | Detailed Engineering - Layout | 784h | 2024-08-30 | 2025-01-14 | 5 | 658.5d |  | Indian Specialized Engineer [400%]; Indian Project Engineer | 3840h | 238,080 |
| 9 | 1.2 | **Construction Phase** | 198d | 2024-05-24 | 2025-02-25 |  | 0d |  |  |  |  |
| 10 | 1.2.1 | Design Civil Works | 55d | 2024-05-24 | 2024-08-08 | 4 | 0d |  |  |  |  |
| 11 | 1.2.2 | Permits and Authorizations | 30d | 2024-07-25 | 2024-09-04 | 10FS-11d | 0d |  |  |  |  |
| 12 | 1.2.3 | Site Installation | 15d | 2024-08-28 | 2024-09-17 | 11FS-6d | 0d |  |  |  |  |
| 13 | 1.2.4 | Excavations & Foundations | 30d | 2024-09-13 | 2024-10-24 | 12FS-3d | 0d |  |  |  |  |
| 14 | 1.2.5 | Structural Improvement | 35d | 2024-10-17 | 2024-12-04 | 13FS-6d | 0d |  |  |  |  |
| 15 | 1.2.6 | Industrial Flooring | 35d | 2024-11-26 | 2025-01-13 | 14FS-7d | 0d |  |  |  |  |
| 16 | 1.2.7 | Finishes | 38d | 2025-01-03 | 2025-02-25 | 15FS-7d | 628.5d |  |  |  |  |
| 17 | 1.3 | **Supplier Selection** | 29d | 2024-10-17 | 2024-11-26 |  | 687.5d |  |  | 864h | 60,480 |
| 18 | 1.3.1 | **Material handling equipments** | 19d | 2024-10-17 | 2024-11-12 |  | 687.5d |  |  | 144h | 10,080 |
| 19 | 1.3.1.1 | Request for proposals | 40h | 2024-10-17 | 2024-10-23 | 4, 7 | 687.5d | 0d | Purchasing agent [200%] | 80h | 5,600 |
| 20 | 1.3.1.2 | Waiting period | 10d | 2024-10-24 | 2024-11-06 | 19 | 703.5d | 0d |  |  |  |
| 21 | 1.3.1.3 | Competitive proposal analysis | 32h | 2024-11-07 | 2024-11-12 | 20 | 703.5d |  | Purchasing agent [200%] | 64h | 4,480 |
| 22 | 1.3.2 | **CNC machine** | 19d | 2024-10-17 | 2024-11-12 |  | 703.5d |  |  | 144h | 10,080 |
| 23 | 1.3.2.1 | Request for proposals | 40h | 2024-10-17 | 2024-10-23 | 4, 7 | 703.5d | 0d | Purchasing agent [200%] | 80h | 5,600 |
| 24 | 1.3.2.2 | Waiting period | 10d | 2024-10-24 | 2024-11-06 | 23 | 703.5d | 0d |  |  |  |
| 25 | 1.3.2.3 | Competitive proposal analysis | 32h | 2024-11-07 | 2024-11-12 | 24 | 703.5d |  | Purchasing agent [200%] | 64h | 4,480 |

| ID | WBS | Task | Duration | Start | Finish | Predecessors | Total slack | Free slack | Resources | Work | Cost |
| --- | --- | --- | --- | --- | --- | --- | --- | --- | --- | --- | --- |
| 26 | 1.3.3 | **Gantry loader (including robots)** | 19d | 2024-10-24 | 2024-11-19 |  | 687.5d |  |  | 144h | 10,080 |
| 27 | 1.3.3.1 | Request for proposals | 40h | 2024-10-24 | 2024-10-30 | 19 | 687.5d | 0d | Purchasing agent [200%] | 80h | 5,600 |
| 28 | 1.3.3.2 | Waiting period | 10d | 2024-10-31 | 2024-11-13 | 27 | 698.5d | 0d |  |  |  |
| 29 | 1.3.3.3 | Competitive proposal analysis | 32h | 2024-11-14 | 2024-11-19 | 28 | 698.5d |  | Purchasing agent [200%] | 64h | 4,480 |
| 30 | 1.3.4 | **Washing** | 19d | 2024-10-24 | 2024-11-19 |  | 698.5d |  |  | 144h | 10,080 |
| 31 | 1.3.4.1 | Request for proposals | 40h | 2024-10-24 | 2024-10-30 | 19 | 698.5d | 0d | Purchasing agent [200%] | 80h | 5,600 |
| 32 | 1.3.4.2 | Waiting period | 10d | 2024-10-31 | 2024-11-13 | 31 | 698.5d | 0d |  |  |  |
| 33 | 1.3.4.3 | Competitive proposal analysis | 32h | 2024-11-14 | 2024-11-19 | 32 | 698.5d |  | Purchasing agent [200%] | 64h | 4,480 |
| 34 | 1.3.5 | **Drilling** | 19d | 2024-10-31 | 2024-11-26 |  | 693.5d |  |  | 144h | 10,080 |
| 35 | 1.3.5.1 | Request for proposals | 40h | 2024-10-31 | 2024-11-06 | 27 | 693.5d | 0d | Purchasing agent [200%] | 80h | 5,600 |
| 36 | 1.3.5.2 | Waiting period | 10d | 2024-11-07 | 2024-11-20 | 35 | 693.5d | 0d |  |  |  |
| 37 | 1.3.5.3 | Competitive proposal analysis | 32h | 2024-11-21 | 2024-11-26 | 36 | 693.5d |  | Purchasing agent [200%] | 64h | 4,480 |
| 38 | 1.3.6 | **Assembly** | 19d | 2024-10-31 | 2024-11-26 |  | 687.5d |  |  | 144h | 10,080 |
| 39 | 1.3.6.1 | Request for proposals | 40h | 2024-10-31 | 2024-11-06 | 27 | 687.5d | 0d | Purchasing agent [200%] | 80h | 5,600 |
| 40 | 1.3.6.2 | Waiting period | 10d | 2024-11-07 | 2024-11-20 | 39 | 687.5d | 0d |  |  |  |
| 41 | 1.3.6.3 | Competitive proposal analysis | 32h | 2024-11-21 | 2024-11-26 | 40 | 687.5d | 0d | Purchasing agent [200%] | 64h | 4,480 |
| 42 | 1.4 | **Procurement** | 330d | 2024-06-06 | 2025-09-10 |  | 130d |  |  | 208h | 18,365,233 |
| 43 | 1.4.1 | **Order 1** | 150d | 2024-06-06 | 2025-01-01 |  | 130d |  |  | 48h | 7,102,380 |
| 44 | 1.4.1.1 | **Germany** | 140d | 2024-06-20 | 2025-01-01 |  | 667.5d |  |  | 32h | 6,988,540 |
| 45 | 1.4.1.1.1 | CNC Single/Double | 16h | 2024-11-27 | 2024-11-28 | 41, 46SF | 687.5d | 0d | Purchasing agent; Double-spindle CNC machine [10 unit]; Single-spindle CNC machine [3 unit] | 16h | 6,021,120 |
| 46 | 1.4.1.1.2 | Manufacturing | 110d | 2024-06-20 | 2024-11-21 | 49SF | 697.5d | 116d |  |  |  |
| 47 | 1.4.1.1.3 | Gantry loader | 16h | 2024-11-27 | 2024-11-28 | 41, 48SF | 691.5d |  | Purchasing agent; Gantry loader (including robots) [10 unit] | 16h | 961,120 |
| 48 | 1.4.1.1.4 | Manufacturing | 95d | 2024-07-11 | 2024-11-21 | 49SF | 697.5d | 101d |  |  |  |
| 49 | 1.4.1.1.5 | Transport | 30d | 2024-11-21 | 2025-01-01 | 15FF-8d | 667.5d | 0d | Ship - From Germany - per TEU [9 TEU] |  | 6,300 |

| ID | WBS | Task | Duration | Start | Finish | Predecessors | Total slack | Free slack | Resources | Work | Cost |
| --- | --- | --- | --- | --- | --- | --- | --- | --- | --- | --- | --- |
| 50 | 1.4.1.2 | **India** | 150d | 2024-06-06 | 2025-01-01 |  | 130d |  |  | 16h | 113,840 |
| 51 | 1.4.1.2.1 | Material handling equipments | 16h | 2024-11-27 | 2024-11-28 | 41, 52SF | 691.5d |  | Purchasing agent; Rotating table [1 unit]; Manipulator [1 unit]; Powered conveyor [34 meter] | 16h | 113,120 |
| 52 | 1.4.1.2.2 | Manufacturing | 130d | 2024-06-06 | 2024-12-05 | 53SF | 687.5d | 126d |  |  |  |
| 53 | 1.4.1.2.3 | Transport | 20d | 2024-12-05 | 2025-01-01 | 15FF-8d | 0d |  | Train - From India - per TEU [2 TEU] |  | 720 |
| 54 | 1.4.2 | **Order 2** | 150d | 2024-10-10 | 2025-05-07 |  | 577.5d |  |  | 80h | 5,759,136 |
| 55 | 1.4.2.1 | **Germany** | 140d | 2024-10-24 | 2025-05-07 |  | 577.5d |  |  | 32h | 4,582,440 |
| 56 | 1.4.2.1.1 | CNC Double | 16h | 2024-11-29 | 2024-12-02 | 45, 57SF | 687.5d | 10d | Double-spindle CNC machine [8 unit]; Purchasing agent | 16h | 4,001,120 |
| 57 | 1.4.2.1.2 | Manufacturing | 110d | 2024-10-24 | 2025-03-27 | 60SF | 607.5d | 28d |  |  |  |
| 58 | 1.4.2.1.3 | Gantry Loader | 16h | 2024-11-29 | 2024-12-02 | 45, 59SF | 689.5d |  | Purchasing agent; Gantry loader (including robots) [6 unit] | 16h | 577,120 |
| 59 | 1.4.2.1.4 | Manufacturing | 95d | 2024-11-14 | 2025-03-27 | 60SF | 607.5d | 13d |  |  |  |
| 60 | 1.4.2.1.5 | Transport | 30d | 2025-03-27 | 2025-05-07 | 90FF | 577.5d | 0d | Ship - From Germany - per TEU [6 TEU] |  | 4,200 |
| 61 | 1.4.2.2 | **Italy** | 102d | 2024-12-17 | 2025-05-07 |  | 577.5d |  |  | 32h | 973,996 |
| 62 | 1.4.2.2.1 | Washing Station | 16h | 2024-12-17 | 2024-12-19 | 56, 63SF | 677.5d |  | Purchasing agent; Final washing station [1 unit]; Indian Specialized Engineer | 32h | 972,080 |
| 63 | 1.4.2.2.2 | Manufacturing | 70d | 2024-12-19 | 2025-03-27 | 64SF | 607.5d | 0d |  |  |  |
| 64 | 1.4.2.2.3 | Transport | 30d | 2025-03-27 | 2025-05-07 | 90FF | 577.5d | 0d | Ship - Fom Italy - per TEU [4 TEU] |  | 1,916 |
| 65 | 1.4.2.3 | **India** | 150d | 2024-10-10 | 2025-05-07 |  | 577.5d |  |  | 16h | 202,700 |
| 66 | 1.4.2.3.1 | Material handling equipments | 16h | 2024-11-29 | 2024-12-02 | 45, 67SF | 689.5d |  | Purchasing agent; Lift/lower component [1 unit]; Rotating table [4 unit]; Powered conveyor [33 meter]; Overhead conveyor [7 meter] | 16h | 201,620 |
| 67 | 1.4.2.3.2 | Manufacturing | 130d | 2024-10-10 | 2025-04-10 | 68SF | 597.5d | 38d |  |  |  |
| 68 | 1.4.2.3.3 | Transport | 20d | 2025-04-10 | 2025-05-07 | 90FF | 577.5d | 0d | Train - From India - per TEU [3 TEU] |  | 1,080 |
| 69 | 1.4.3 | **Order 3** | 152d | 2025-02-11 | 2025-09-10 |  | 2d |  |  | 80h | 5,503,717 |
| 70 | 1.4.3.1 | **Germany** | 142d | 2025-02-25 | 2025-09-10 |  | 487.5d |  |  | 32h | 2,869,740 |
| 71 | 1.4.3.1.1 | CNC Double | 16h | 2025-02-25 | 2025-02-27 | 56, 72SF | 627.5d |  | Purchasing agent; Double-spindle CNC machine [4 unit] | 16h | 2,001,120 |
| 72 | 1.4.3.1.2 | Manufacturing | 110d | 2025-02-27 | 2025-07-31 | 75SF | 405d | 0d |  |  |  |
| 73 | 1.4.3.1.3 | Gantry Loader | 16h | 2025-03-18 | 2025-03-20 | 56, 74SF | 612.5d |  | Purchasing agent; Gantry loader (including robots) [9 unit] | 16h | 865,120 |
| 74 | 1.4.3.1.4 | Manufacturing | 95d | 2025-03-20 | 2025-07-31 | 75SF | 405d | 0d |  |  |  |
| 75 | 1.4.3.1.5 | Transport | 30d | 2025-07-31 | 2025-09-10 | 101FF | 375d | 0d | Ship - From Germany - per TEU [5 TEU] |  | 3,500 |

| ID | WBS | Task | Duration | Start | Finish | Predecessors | Total slack | Free slack | Resources | Work | Cost |
| --- | --- | --- | --- | --- | --- | --- | --- | --- | --- | --- | --- |
| 76 | 1.4.3.2 | **Italy** | 132d | 2025-03-11 | 2025-09-10 |  | 487.5d |  |  | 32h | 2,473,677 |
| 77 | 1.4.3.2.1 | Assembly station | 16h | 2025-03-11 | 2025-03-13 | 56, 78SF | 617.5d |  | Purchasing agent; Assembly station [2 unit] | 16h | 2,201,120 |
| 78 | 1.4.3.2.2 | Manufacturing | 100d | 2025-03-13 | 2025-07-31 | 81SF | 405d | 0d |  |  |  |
| 79 | 1.4.3.2.3 | Drilling Machine | 16h | 2025-04-28 | 2025-04-30 | 56, 80SF | 583.5d |  | Purchasing agent; Drilling machine [1 unit] | 16h | 271,120 |
| 80 | 1.4.3.2.4 | Manufacturing | 66d | 2025-04-30 | 2025-07-31 | 81SF | 405d | 0d |  |  |  |
| 81 | 1.4.3.2.5 | Transport | 30d | 2025-07-31 | 2025-09-10 | 101FF | 375d | 0d | Ship - Fom Italy - per TEU [3 TEU] |  | 1,437 |
| 82 | 1.4.3.3 | **India** | 152d | 2025-02-11 | 2025-09-10 |  | 2d |  |  | 16h | 160,300 |
| 83 | 1.4.3.3.1 | Material handling equipments | 16h | 2025-02-11 | 2025-02-13 | 56, 84SF | 637.5d |  | Purchasing agent; Lift/lower component [1 unit]; Rotating table [1 unit]; Manipulator [1 unit]; Powered conveyor [33 meter]; Overhead conveyor [6 meter] | 16h | 159,220 |
| 84 | 1.4.3.3.2 | Manufacturing | 130d | 2025-02-13 | 2025-08-14 | 85SF | 0d |  |  |  |  |
| 85 | 1.4.3.3.3 | Transport | 20d | 2025-08-14 | 2025-09-10 | 101FF | 0d |  | Train - From India - per TEU [3 TEU] |  | 1,080 |
| 86 | 1.5 | **ON SITE ERECTION PHASE** | 280d | 2025-01-02 | 2026-01-28 |  | 0d |  |  | 27920h | 3,013,600 |
| 87 | 1.5.1 | **Operations** | 100d | 2025-01-02 | 2025-05-21 |  | 0d |  |  | 7200h | 651,600 |
| 88 | 1.5.1.1 | **Phase 1** | 100d | 2025-01-02 | 2025-05-21 |  | 0d |  |  | 7200h | 651,600 |
| 89 | 1.5.1.1.1 | **OP10** | 100d | 2025-01-02 | 2025-05-21 |  | 0d |  |  | 2400h | 217,200 |
| 90 | 1.5.1.1.1.1 | Mechanical Assembly & Installation | 90d | 2025-01-02 | 2025-05-07 | 53 | 0d |  | Team of Indian workers (4 workers each) [300%] | 2160h | 140,400 |
| 91 | 1.5.1.1.1.2 | Electrical&IT Connections | 10d | 2025-05-08 | 2025-05-21 | 90 | 435d | 0d | Team of Italian workers (4 workers each) [300%] | 240h | 76,800 |
| 92 | 1.5.1.1.2 | **OP50** | 100d | 2025-01-02 | 2025-05-21 |  | 547.5d |  |  | 2400h | 217,200 |
| 93 | 1.5.1.1.2.1 | Mechanical Assembly & Installation | 90d | 2025-01-02 | 2025-05-07 | 90SS | 435d | 0d | Team of Indian workers (4 workers each) [300%] | 2160h | 140,400 |
| 94 | 1.5.1.1.2.2 | Electrical&IT Connections | 10d | 2025-05-08 | 2025-05-21 | 93 | 435d | 0d | Team of Italian workers (4 workers each) [300%] | 240h | 76,800 |
| 95 | 1.5.1.1.3 | **OP90** | 100d | 2025-01-02 | 2025-05-21 |  | 547.5d |  |  | 2400h | 217,200 |
| 96 | 1.5.1.1.3.1 | Mechanical Assembly & Installation | 90d | 2025-01-02 | 2025-05-07 | 90SS | 435d | 0d | Team of Indian workers (4 workers each) [300%] | 2160h | 140,400 |
| 97 | 1.5.1.1.3.2 | Electrical&IT Connections | 10d | 2025-05-08 | 2025-05-21 | 96 | 435d | 0d | Team of Italian workers (4 workers each) [300%] | 240h | 76,800 |
| 98 | 1.5.2 | **Crash** | 190d | 2025-05-08 | 2026-01-28 |  | 0d |  | OH crash | 20720h | 2,362,000 |
| 99 | 1.5.2.1 | **Phase 2** | 100d | 2025-05-08 | 2025-09-24 |  | 0d |  |  | 9600h | 1,086,000 |
| 100 | 1.5.2.1.1 | **OP30** | 100d | 2025-05-08 | 2025-09-24 |  | 0d |  |  | 2400h | 217,200 |
| 101 | 1.5.2.1.1.1 | Mechanical Assembly & Installation | 90d | 2025-05-08 | 2025-09-10 | 90 | 0d |  | Team of Indian workers (4 workers each) [300%] | 2160h | 140,400 |
| 102 | 1.5.2.1.1.2 | Electrical&IT Connections | 10d | 2025-09-11 | 2025-09-24 | 101 | 345d | 0d | Team of Italian workers (4 workers each) [300%] | 240h | 76,800 |

| ID | WBS | Task | Duration | Start | Finish | Predecessors | Total slack | Free slack | Resources | Work | Cost |
| --- | --- | --- | --- | --- | --- | --- | --- | --- | --- | --- | --- |
| 103 | 1.5.2.1.2 | **OP100** | 100d | 2025-05-08 | 2025-09-24 |  | 457.5d |  |  | 2400h | 217,200 |
| 104 | 1.5.2.1.2.1 | Mechanical Assembly & Installation | 90d | 2025-05-08 | 2025-09-10 | 90 | 345d | 0d | Team of Indian workers (4 workers each) [300%] | 2160h | 140,400 |
| 105 | 1.5.2.1.2.2 | Electrical&IT Connections | 10d | 2025-09-11 | 2025-09-24 | 104 | 345d | 0d | Team of Italian workers (4 workers each) [300%] | 240h | 76,800 |
| 106 | 1.5.2.1.3 | **OP60** | 100d | 2025-05-08 | 2025-09-24 |  | 457.5d |  |  | 2400h | 217,200 |
| 107 | 1.5.2.1.3.1 | Mechanical Assembly & Installation | 90d | 2025-05-08 | 2025-09-10 | 90 | 345d | 0d | Team of Indian workers (4 workers each) [300%] | 2160h | 140,400 |
| 108 | 1.5.2.1.3.2 | Electrical&IT Connections | 10d | 2025-09-11 | 2025-09-24 | 107 | 345d | 0d | Team of Italian workers (4 workers each) [300%] | 240h | 76,800 |
| 109 | 1.5.2.1.4 | **OP80** | 100d | 2025-05-08 | 2025-09-24 |  | 457.5d |  |  | 2400h | 434,400 |
| 110 | 1.5.2.1.4.1 | Mechanical Assembly & Installation | 90d | 2025-05-08 | 2025-09-10 | 90 | 345d | 0d | Team of Indian workers (4 workers each)-crash [300%] | 2160h | 280,800 |
| 111 | 1.5.2.1.4.2 | Electrical&IT Connections | 10d | 2025-09-11 | 2025-09-24 | 110 | 345d | 0d | Team of italian workers (4 workers each) - crash [300%] | 240h | 153,600 |
| 112 | 1.5.2.2 | **Phase 3** | 100d | 2025-09-11 | 2026-01-28 |  | 347.5d |  |  | 9600h | 1,086,000 |
| 113 | 1.5.2.2.1 | **OP40** | 100d | 2025-09-11 | 2026-01-28 |  | 367.5d |  |  | 2400h | 217,200 |
| 114 | 1.5.2.2.1.1 | Mechanical Assembly & Installation | 90d | 2025-09-11 | 2026-01-14 | 101 | 255d | 0d | Team of Indian workers (4 workers each) [300%] | 2160h | 140,400 |
| 115 | 1.5.2.2.1.2 | Electrical&IT Connections | 10d | 2026-01-15 | 2026-01-28 | 114 | 255d | 0d | Team of Italian workers (4 workers each) [300%] | 240h | 76,800 |
| 116 | 1.5.2.2.2 | **OP70** | 100d | 2025-09-11 | 2026-01-28 |  | 367.5d |  |  | 2400h | 217,200 |
| 117 | 1.5.2.2.2.1 | Mechanical Assembly & Installation | 90d | 2025-09-11 | 2026-01-14 | 101 | 255d | 0d | Team of Indian workers (4 workers each) [300%] | 2160h | 140,400 |
| 118 | 1.5.2.2.2.2 | Electrical&IT Connections | 10d | 2026-01-15 | 2026-01-28 | 117 | 255d | 0d | Team of Italian workers (4 workers each) [300%] | 240h | 76,800 |
| 119 | 1.5.2.2.3 | **OP110** | 100d | 2025-09-11 | 2026-01-28 |  | 367.5d |  |  | 2400h | 217,200 |
| 120 | 1.5.2.2.3.1 | Mechanical Assembly & Installation | 90d | 2025-09-11 | 2026-01-14 | 101 | 255d | 0d | Team of Indian workers (4 workers each) [300%] | 2160h | 140,400 |
| 121 | 1.5.2.2.3.2 | Electrical&IT Connections | 10d | 2026-01-15 | 2026-01-28 | 120 | 255d | 0d | Team of Italian workers (4 workers each) [300%] | 240h | 76,800 |
| 122 | 1.5.2.2.4 | **OP20** | 100d | 2025-09-11 | 2026-01-28 |  | 347.5d |  |  | 2400h | 434,400 |
| 123 | 1.5.2.2.4.1 | Mechanical Assembly & Installation | 90d | 2025-09-11 | 2026-01-14 | 101 | 347.5d | 0d | Team of Indian workers (4 workers each)-crash [300%] | 2160h | 280,800 |
| 124 | 1.5.2.2.4.2 | Electrical&IT Connections | 10d | 2026-01-15 | 2026-01-28 | 123 | 347.5d | 0d | Team of italian workers (4 workers each) - crash [300%] | 240h | 153,600 |
| 125 | 1.6 | **Final Assembly** | 200d | 2025-05-22 | 2026-02-25 |  | 367.5d |  |  | 5440h | 2,016,800 |
| 126 | 1.6.1 | Operation 10 | 20d | 2025-05-22 | 2025-06-18 | 91 | 547.5d |  | Team of Italian workers (4 workers each) [300%] | 480h | 153,600 |
| 127 | 1.6.2 | Operation 50 | 20d | 2025-05-22 | 2025-06-18 | 94 | 547.5d |  | Team of Italian workers (4 workers each) [300%] | 480h | 153,600 |
| 128 | 1.6.3 | Operation 90 | 20d | 2025-05-22 | 2025-06-18 | 97 | 547.5d |  | Team of Italian workers (4 workers each) [300%] | 480h | 153,600 |
| 129 | 1.6.4 | Operation 30 | 20d | 2025-09-25 | 2025-10-22 | 102 | 457.5d |  | Team of Italian workers (4 workers each) [300%] | 480h | 153,600 |
| 130 | 1.6.5 | Operation 60 | 20d | 2025-09-25 | 2025-10-22 | 105 | 457.5d |  | Team of Italian workers (4 workers each) [300%] | 480h | 153,600 |
| 131 | 1.6.6 | Operation 80 | 20d | 2025-09-25 | 2025-10-22 | 108 | 457.5d |  | Team of italian workers (4 workers each) - crash [300%] | 480h | 307,200 |
| 132 | 1.6.7 | Operation 100 | 20d | 2025-09-25 | 2025-10-22 | 111 | 457.5d |  | Team of Italian workers (4 workers each) [300%] | 480h | 153,600 |
| 133 | 1.6.8 | Operation 20 | 20d | 2026-01-29 | 2026-02-25 | 115 | 367.5d |  | Team of italian workers (4 workers each) - crash [300%]; OH crash | 640h | 327,200 |
| 134 | 1.6.9 | Operation 40 | 20d | 2026-01-29 | 2026-02-25 | 118 | 367.5d |  | Team of Italian workers (4 workers each) [300%] | 480h | 153,600 |
| 135 | 1.6.10 | Operation 70 | 20d | 2026-01-29 | 2026-02-25 | 121 | 367.5d |  | Team of Italian workers (4 workers each) [300%] | 480h | 153,600 |
| 136 | 1.6.11 | Operation 110 | 20d | 2026-01-29 | 2026-02-25 | 124 | 347.5d | 0d | Team of Italian workers (4 workers each) [300%] | 480h | 153,600 |
| 137 | 1.7 | FINAL LINE TESTING | 20d | 2026-02-26 | 2026-03-25 | 136 | 347.5d |  | Italian Project Engineer; Team of Italian workers (4 workers each) | 320h | 73,600 |

| ID | WBS | Task | Duration | Start | Finish | Predecessors | Total slack | Free slack | Resources | Work | Cost |
| --- | --- | --- | --- | --- | --- | --- | --- | --- | --- | --- | --- |
| 139 | 2 | **ERP** | 507.5d | 2025-08-14 | 2027-07-26 | 84 | 0d |  |  | 28324h | 3,358,440 |
| 140 | 2.1 | **Prepare** | 57.5d | 2025-08-14 | 2025-11-03 |  | 0d |  |  | 1560h | 306,800 |
| 141 | 2.1.1 | Conduct needs analysis and Requrements gathering | 1mo | 2025-08-14 | 2025-09-10 |  | 0d |  | CEO IN [50%]; CEO IT [50%]; Project Manager/Director; ERP Expert IT | 480h | 94,400 |
| 142 | 2.1.2 | Define Project Objectives | 1.5w | 2025-09-11 | 2025-09-22 | 141 | 0d |  | CEO IN [50%]; CEO IT [50%]; Project Manager/Director; ERP Expert IT | 180h | 35,400 |
| 143 | 2.1.3 | Define Scope | 2w | 2025-09-22 | 2025-10-06 | 142 | 0d |  | CEO IN [50%]; CEO IT [50%]; Project Manager/Director; ERP Expert IT | 240h | 47,200 |
| 144 | 2.1.4 | Develop Communication Plan | 1.5w | 2025-10-06 | 2025-10-15 | 143 | 462.5d |  | CEO IN [50%]; CEO IT [50%]; Project Manager/Director; ERP Expert IT | 180h | 35,400 |
| 145 | 2.1.5 | Identify Resources | 4w | 2025-10-06 | 2025-11-03 | 143 | 0d |  | CEO IN [50%]; CEO IT [50%]; Project Manager/Director; ERP Expert IT | 480h | 94,400 |
| 146 | 2.2 | **Explore** | 85d | 2025-11-03 | 2026-03-02 |  | 0d |  |  | 4800h | 552,000 |
| 147 | 2.2.1 | perform detailed process mapping | 1.5mo | 2025-11-03 | 2025-12-15 | 145 | 0d |  | Functional Managers IT; Functional Professionals IT; Functional Managers IN; Functional Professionals IN; ERP Expert IT; Business Analyst IT | 1440h | 165,600 |
| 148 | 2.2.2 | Conduct Gap Analysis , WRICEF approach | 10d | 2025-12-15 | 2025-12-29 | 147 | 0d |  | Functional Managers IT; Functional Professionals IT; Functional Managers IN; Functional Professionals IN; ERP Expert IT; Business Analyst IT | 480h | 55,200 |
| 149 | 2.2.3 | Develop functional specification and realization plan | 3w | 2025-12-29 | 2026-01-19 | 148 | 0d |  | Functional Managers IT; Functional Professionals IT; Functional Managers IN; Functional Professionals IN; ERP Expert IT; Business Analyst IT | 720h | 82,800 |
| 150 | 2.2.4 | Develop security, privacy, and controls approach | 3w | 2025-12-29 | 2026-01-19 | 149SS | 0d |  | Functional Managers IT; Functional Professionals IT; Functional Managers IN; Functional Professionals IN; ERP Expert IT; Business Analyst IT | 720h | 82,800 |
| 151 | 2.2.5 | Design Business Processes | 1.5mo | 2026-01-19 | 2026-03-02 | 150 | 0d |  | Functional Managers IT; Functional Professionals IT; Functional Managers IN; Functional Professionals IN; ERP Expert IT; Business Analyst IT | 1440h | 165,600 |
| 152 | 2.3 | **Realize - Build** | 100d | 2026-03-02 | 2026-07-20 |  | 0d |  |  | 7904h | 869,440 |
| 153 | 2.3.1 | **Commercial** | 100d | 2026-03-02 | 2026-07-20 |  | 265d |  |  | 832h | 91,520 |
| 154 | 2.3.1.1 | **CRM** | 100d | 2026-03-02 | 2026-07-20 |  | 265d |  |  | 416h | 45,760 |
| 155 | 2.3.1.1.1 | Develop technical customization | 1mo | 2026-03-02 | 2026-03-30 | 151 | 265d | 0d | Functional Professionals IT [10%]; Functional Professionals IN [10%]; ERP Expert IT [10%]; ERP Professional IN [10%] | 64h | 7,040 |
| 156 | 2.3.1.1.2 | Develop configuration and Custom code | 2mo | 2026-03-30 | 2026-05-25 | 155 | 265d | 0d | Functional Professionals IT [10%]; Functional Professionals IN [10%]; ERP Expert IT [10%]; ERP Professional IN [10%] | 128h | 14,080 |
| 157 | 2.3.1.1.3 | Create test environment | 2w | 2026-05-25 | 2026-06-08 | 156 | 265d | 0d | Functional Professionals IT [10%]; Functional Professionals IN [10%]; ERP Expert IT [10%]; ERP Professional IN [10%] | 32h | 3,520 |
| 158 | 2.3.1.1.4 | Perform unit tests | 1.5mo | 2026-06-08 | 2026-07-20 | 157 | 265d |  | Functional Professionals IT [10%]; Functional Professionals IN [10%]; ERP Expert IT [10%]; ERP Professional IN [10%] | 96h | 10,560 |
| 159 | 2.3.1.1.5 | Develop Go/No Go test criteria | 1mo | 2026-06-08 | 2026-07-06 | 157 | 265d | 0d | Functional Professionals IT [10%]; Functional Professionals IN [10%]; ERP Expert IT [10%]; ERP Professional IN [10%] | 64h | 7,040 |
| 160 | 2.3.1.1.6 | Develop Training Materials | 2w | 2026-07-06 | 2026-07-20 | 159 | 265d |  | Functional Professionals IT [10%]; Functional Professionals IN [10%]; ERP Expert IT [10%]; ERP Professional IN [10%] | 32h | 3,520 |
| 161 | 2.3.1.2 | **Sales** | 100d | 2026-03-02 | 2026-07-20 |  | 265d |  |  | 416h | 45,760 |
| 162 | 2.3.1.2.1 | Develop technical customization | 1mo | 2026-03-02 | 2026-03-30 | 151 | 265d | 0d | Functional Professionals IT [10%]; Functional Professionals IN [10%]; ERP Expert IT [10%]; ERP Professional IN [10%] | 64h | 7,040 |
| 163 | 2.3.1.2.2 | Develop configuration and Custom code | 2mo | 2026-03-30 | 2026-05-25 | 162 | 265d | 0d | Functional Professionals IT [10%]; Functional Professionals IN [10%]; ERP Expert IT [10%]; ERP Professional IN [10%] | 128h | 14,080 |
| 164 | 2.3.1.2.3 | Create test environment | 2w | 2026-05-25 | 2026-06-08 | 163 | 265d | 0d | Functional Professionals IT [10%]; Functional Professionals IN [10%]; ERP Expert IT [10%]; ERP Professional IN [10%] | 32h | 3,520 |
| 165 | 2.3.1.2.4 | Perform unit tests | 1.5mo | 2026-06-08 | 2026-07-20 | 164 | 265d |  | Functional Professionals IT [10%]; Functional Professionals IN [10%]; ERP Expert IT [10%]; ERP Professional IN [10%] | 96h | 10,560 |
| 166 | 2.3.1.2.5 | Develop Go/No Go test criteria | 1mo | 2026-06-08 | 2026-07-06 | 164 | 265d | 0d | Functional Professionals IT [10%]; Functional Professionals IN [10%]; ERP Expert IT [10%]; ERP Professional IN [10%] | 64h | 7,040 |
| 167 | 2.3.1.2.6 | Develop Training Materials | 2w | 2026-07-06 | 2026-07-20 | 166 | 265d |  | Functional Professionals IT [10%]; Functional Professionals IN [10%]; ERP Expert IT [10%]; ERP Professional IN [10%] | 32h | 3,520 |

| ID | WBS | Task | Duration | Start | Finish | Predecessors | Total slack | Free slack | Resources | Work | Cost |
| --- | --- | --- | --- | --- | --- | --- | --- | --- | --- | --- | --- |
| 168 | 2.3.2 | **Engineering** | 100d | 2026-03-02 | 2026-07-20 |  | 265d |  |  | 2080h | 228,800 |
| 169 | 2.3.2.1 | **Project** | 100d | 2026-03-02 | 2026-07-20 |  | 265d |  |  | 416h | 45,760 |
| 170 | 2.3.2.1.1 | Develop technical customization | 1mo | 2026-03-02 | 2026-03-30 | 151 | 265d | 0d | Functional Professionals IT [10%]; Functional Professionals IN [10%]; ERP Expert IT [10%]; ERP Professional IN [10%] | 64h | 7,040 |
| 171 | 2.3.2.1.2 | Develop configuration and Custom code | 2mo | 2026-03-30 | 2026-05-25 | 170 | 265d | 0d | Functional Professionals IT [10%]; Functional Professionals IN [10%]; ERP Expert IT [10%]; ERP Professional IN [10%] | 128h | 14,080 |
| 172 | 2.3.2.1.3 | Create test environment | 2w | 2026-05-25 | 2026-06-08 | 171 | 265d | 0d | Functional Professionals IT [10%]; Functional Professionals IN [10%]; ERP Expert IT [10%]; ERP Professional IN [10%] | 32h | 3,520 |
| 173 | 2.3.2.1.4 | Perform unit tests | 1.5mo | 2026-06-08 | 2026-07-20 | 172 | 265d |  | Functional Professionals IT [10%]; Functional Professionals IN [10%]; ERP Expert IT [10%]; ERP Professional IN [10%] | 96h | 10,560 |
| 174 | 2.3.2.1.5 | Develop Go/No Go test criteria | 1mo | 2026-06-08 | 2026-07-06 | 172 | 265d | 0d | Functional Professionals IT [10%]; Functional Professionals IN [10%]; ERP Expert IT [10%]; ERP Professional IN [10%] | 64h | 7,040 |
| 175 | 2.3.2.1.6 | Develop Training Materials | 2w | 2026-07-06 | 2026-07-20 | 174 | 265d |  | Functional Professionals IT [10%]; Functional Professionals IN [10%]; ERP Expert IT [10%]; ERP Professional IN [10%] | 32h | 3,520 |
| 176 | 2.3.2.2 | **Product Life-cyle Management** | 100d | 2026-03-02 | 2026-07-20 |  | 265d |  |  | 416h | 45,760 |
| 177 | 2.3.2.2.1 | Develop technical customization | 1mo | 2026-03-02 | 2026-03-30 | 151 | 265d | 0d | Functional Professionals IT [10%]; Functional Professionals IN [10%]; ERP Expert IT [10%]; ERP Professional IN [10%] | 64h | 7,040 |
| 178 | 2.3.2.2.2 | Develop configuration and Custom code | 2mo | 2026-03-30 | 2026-05-25 | 177 | 265d | 0d | Functional Professionals IT [10%]; Functional Professionals IN [10%]; ERP Expert IT [10%]; ERP Professional IN [10%] | 128h | 14,080 |
| 179 | 2.3.2.2.3 | Create test environment | 2w | 2026-05-25 | 2026-06-08 | 178 | 265d | 0d | Functional Professionals IT [10%]; Functional Professionals IN [10%]; ERP Expert IT [10%]; ERP Professional IN [10%] | 32h | 3,520 |
| 180 | 2.3.2.2.4 | Perform unit tests | 1.5mo | 2026-06-08 | 2026-07-20 | 179 | 265d |  | Functional Professionals IT [10%]; Functional Professionals IN [10%]; ERP Expert IT [10%]; ERP Professional IN [10%] | 96h | 10,560 |
| 181 | 2.3.2.2.5 | Develop Go/No Go test criteria | 1mo | 2026-06-08 | 2026-07-06 | 179 | 265d | 0d | Functional Professionals IT [10%]; Functional Professionals IN [10%]; ERP Expert IT [10%]; ERP Professional IN [10%] | 64h | 7,040 |
| 182 | 2.3.2.2.6 | Develop Training Materials | 2w | 2026-07-06 | 2026-07-20 | 181 | 265d |  | Functional Professionals IT [10%]; Functional Professionals IN [10%]; ERP Expert IT [10%]; ERP Professional IN [10%] | 32h | 3,520 |
| 183 | 2.3.2.3 | **Quality** | 100d | 2026-03-02 | 2026-07-20 |  | 265d |  |  | 416h | 45,760 |
| 184 | 2.3.2.3.1 | Develop technical customization | 1mo | 2026-03-02 | 2026-03-30 | 151 | 265d | 0d | Functional Professionals IT [10%]; Functional Professionals IN [10%]; ERP Expert IT [10%]; ERP Professional IN [10%] | 64h | 7,040 |
| 185 | 2.3.2.3.2 | Develop configuration and Custom code | 2mo | 2026-03-30 | 2026-05-25 | 184 | 265d | 0d | Functional Professionals IT [10%]; Functional Professionals IN [10%]; ERP Expert IT [10%]; ERP Professional IN [10%] | 128h | 14,080 |
| 186 | 2.3.2.3.3 | Create test environment | 2w | 2026-05-25 | 2026-06-08 | 185 | 265d | 0d | Functional Professionals IT [10%]; Functional Professionals IN [10%]; ERP Expert IT [10%]; ERP Professional IN [10%] | 32h | 3,520 |
| 187 | 2.3.2.3.4 | Perform unit tests | 1.5mo | 2026-06-08 | 2026-07-20 | 186 | 265d |  | Functional Professionals IT [10%]; Functional Professionals IN [10%]; ERP Expert IT [10%]; ERP Professional IN [10%] | 96h | 10,560 |
| 188 | 2.3.2.3.5 | Develop Go/No Go test criteria | 1mo | 2026-06-08 | 2026-07-06 | 186 | 265d | 0d | Functional Professionals IT [10%]; Functional Professionals IN [10%]; ERP Expert IT [10%]; ERP Professional IN [10%] | 64h | 7,040 |
| 189 | 2.3.2.3.6 | Develop Training Materials | 2w | 2026-07-06 | 2026-07-20 | 188 | 265d |  | Functional Professionals IT [10%]; Functional Professionals IN [10%]; ERP Expert IT [10%]; ERP Professional IN [10%] | 32h | 3,520 |
| 190 | 2.3.2.4 | **Timesheets** | 100d | 2026-03-02 | 2026-07-20 |  | 265d |  |  | 416h | 45,760 |
| 191 | 2.3.2.4.1 | Develop technical customization | 1mo | 2026-03-02 | 2026-03-30 | 151 | 265d | 0d | Functional Professionals IT [10%]; Functional Professionals IN [10%]; ERP Expert IT [10%]; ERP Professional IN [10%] | 64h | 7,040 |
| 192 | 2.3.2.4.2 | Develop configuration and Custom code | 2mo | 2026-03-30 | 2026-05-25 | 191 | 265d | 0d | Functional Professionals IT [10%]; Functional Professionals IN [10%]; ERP Expert IT [10%]; ERP Professional IN [10%] | 128h | 14,080 |
| 193 | 2.3.2.4.3 | Create test environment | 2w | 2026-05-25 | 2026-06-08 | 192 | 265d | 0d | Functional Professionals IT [10%]; Functional Professionals IN [10%]; ERP Expert IT [10%]; ERP Professional IN [10%] | 32h | 3,520 |
| 194 | 2.3.2.4.4 | Perform unit tests | 1.5mo | 2026-06-08 | 2026-07-20 | 193 | 265d |  | Functional Professionals IT [10%]; Functional Professionals IN [10%]; ERP Expert IT [10%]; ERP Professional IN [10%] | 96h | 10,560 |
| 195 | 2.3.2.4.5 | Develop Go/No Go test criteria | 1mo | 2026-06-08 | 2026-07-06 | 193 | 265d | 0d | Functional Professionals IT [10%]; Functional Professionals IN [10%]; ERP Expert IT [10%]; ERP Professional IN [10%] | 64h | 7,040 |
| 196 | 2.3.2.4.6 | Develop Training Materials | 2w | 2026-07-06 | 2026-07-20 | 195 | 265d |  | Functional Professionals IT [10%]; Functional Professionals IN [10%]; ERP Expert IT [10%]; ERP Professional IN [10%] | 32h | 3,520 |

| ID | WBS | Task | Duration | Start | Finish | Predecessors | Total slack | Free slack | Resources | Work | Cost |
| --- | --- | --- | --- | --- | --- | --- | --- | --- | --- | --- | --- |
| 197 | 2.3.2.5 | **Documents** | 100d | 2026-03-02 | 2026-07-20 |  | 265d |  |  | 416h | 45,760 |
| 198 | 2.3.2.5.1 | Develop technical customization | 1mo | 2026-03-02 | 2026-03-30 | 151 | 265d | 0d | Functional Professionals IT [10%]; Functional Professionals IN [10%]; ERP Expert IT [10%]; ERP Professional IN [10%] | 64h | 7,040 |
| 199 | 2.3.2.5.2 | Develop configuration and Custom code | 2mo | 2026-03-30 | 2026-05-25 | 198 | 265d | 0d | Functional Professionals IT [10%]; Functional Professionals IN [10%]; ERP Expert IT [10%]; ERP Professional IN [10%] | 128h | 14,080 |
| 200 | 2.3.2.5.3 | Create test environment | 2w | 2026-05-25 | 2026-06-08 | 199 | 265d | 0d | Functional Professionals IT [10%]; Functional Professionals IN [10%]; ERP Expert IT [10%]; ERP Professional IN [10%] | 32h | 3,520 |
| 201 | 2.3.2.5.4 | Perform unit tests | 1.5mo | 2026-06-08 | 2026-07-20 | 200 | 265d |  | Functional Professionals IT [10%]; Functional Professionals IN [10%]; ERP Expert IT [10%]; ERP Professional IN [10%] | 96h | 10,560 |
| 202 | 2.3.2.5.5 | Develop Go/No Go test criteria | 1mo | 2026-06-08 | 2026-07-06 | 200 | 265d | 0d | Functional Professionals IT [10%]; Functional Professionals IN [10%]; ERP Expert IT [10%]; ERP Professional IN [10%] | 64h | 7,040 |
| 203 | 2.3.2.5.6 | Develop Training Materials | 2w | 2026-07-06 | 2026-07-20 | 202 | 265d |  | Functional Professionals IT [10%]; Functional Professionals IN [10%]; ERP Expert IT [10%]; ERP Professional IN [10%] | 32h | 3,520 |
| 204 | 2.3.3 | **Manufacturing** | 100d | 2026-03-02 | 2026-07-20 |  | 265d |  |  | 1664h | 183,040 |
| 205 | 2.3.3.1 | **Production Planning and Materials Requirement** | 100d | 2026-03-02 | 2026-07-20 |  | 265d |  |  | 416h | 45,760 |
| 206 | 2.3.3.1.1 | Develop technical customization | 1mo | 2026-03-02 | 2026-03-30 | 151 | 265d | 0d | Functional Professionals IT [10%]; Functional Professionals IN [10%]; ERP Expert IT [10%]; ERP Professional IN [10%] | 64h | 7,040 |
| 207 | 2.3.3.1.2 | Develop configuration and Custom code | 2mo | 2026-03-30 | 2026-05-25 | 206 | 265d | 0d | Functional Professionals IT [10%]; Functional Professionals IN [10%]; ERP Expert IT [10%]; ERP Professional IN [10%] | 128h | 14,080 |
| 208 | 2.3.3.1.3 | Create test environment | 2w | 2026-05-25 | 2026-06-08 | 207 | 265d | 0d | Functional Professionals IT [10%]; Functional Professionals IN [10%]; ERP Expert IT [10%]; ERP Professional IN [10%] | 32h | 3,520 |
| 209 | 2.3.3.1.4 | Perform unit tests | 1.5mo | 2026-06-08 | 2026-07-20 | 208 | 265d |  | Functional Professionals IT [10%]; Functional Professionals IN [10%]; ERP Expert IT [10%]; ERP Professional IN [10%] | 96h | 10,560 |
| 210 | 2.3.3.1.5 | Develop Go/No Go test criteria | 1mo | 2026-06-08 | 2026-07-06 | 208 | 265d | 0d | Functional Professionals IT [10%]; Functional Professionals IN [10%]; ERP Expert IT [10%]; ERP Professional IN [10%] | 64h | 7,040 |
| 211 | 2.3.3.1.6 | Develop Training Materials | 2w | 2026-07-06 | 2026-07-20 | 210 | 265d |  | Functional Professionals IT [10%]; Functional Professionals IN [10%]; ERP Expert IT [10%]; ERP Professional IN [10%] | 32h | 3,520 |
| 212 | 2.3.3.2 | **Inventory** | 100d | 2026-03-02 | 2026-07-20 |  | 265d |  |  | 416h | 45,760 |
| 213 | 2.3.3.2.1 | Develop technical customization | 1mo | 2026-03-02 | 2026-03-30 | 151 | 265d | 0d | Functional Professionals IT [10%]; Functional Professionals IN [10%]; ERP Expert IT [10%]; ERP Professional IN [10%] | 64h | 7,040 |
| 214 | 2.3.3.2.2 | Develop configuration and Custom code | 2mo | 2026-03-30 | 2026-05-25 | 213 | 265d | 0d | Functional Professionals IT [10%]; Functional Professionals IN [10%]; ERP Expert IT [10%]; ERP Professional IN [10%] | 128h | 14,080 |
| 215 | 2.3.3.2.3 | Create test environment | 2w | 2026-05-25 | 2026-06-08 | 214 | 265d | 0d | Functional Professionals IT [10%]; Functional Professionals IN [10%]; ERP Expert IT [10%]; ERP Professional IN [10%] | 32h | 3,520 |
| 216 | 2.3.3.2.4 | Perform unit tests | 1.5mo | 2026-06-08 | 2026-07-20 | 215 | 265d |  | Functional Professionals IT [10%]; Functional Professionals IN [10%]; ERP Expert IT [10%]; ERP Professional IN [10%] | 96h | 10,560 |
| 217 | 2.3.3.2.5 | Develop Go/No Go test criteria | 1mo | 2026-06-08 | 2026-07-06 | 215 | 265d | 0d | Functional Professionals IT [10%]; Functional Professionals IN [10%]; ERP Expert IT [10%]; ERP Professional IN [10%] | 64h | 7,040 |
| 218 | 2.3.3.2.6 | Develop Training Materials | 2w | 2026-07-06 | 2026-07-20 | 217 | 265d |  | Functional Professionals IT [10%]; Functional Professionals IN [10%]; ERP Expert IT [10%]; ERP Professional IN [10%] | 32h | 3,520 |
| 219 | 2.3.3.3 | **Maintenance** | 100d | 2026-03-02 | 2026-07-20 |  | 265d |  |  | 416h | 45,760 |
| 220 | 2.3.3.3.1 | Develop technical customization | 1mo | 2026-03-02 | 2026-03-30 | 151 | 265d | 0d | Functional Professionals IT [10%]; Functional Professionals IN [10%]; ERP Expert IT [10%]; ERP Professional IN [10%] | 64h | 7,040 |
| 221 | 2.3.3.3.2 | Develop configuration and Custom code | 2mo | 2026-03-30 | 2026-05-25 | 220 | 265d | 0d | Functional Professionals IT [10%]; Functional Professionals IN [10%]; ERP Expert IT [10%]; ERP Professional IN [10%] | 128h | 14,080 |
| 222 | 2.3.3.3.3 | Create test environment | 2w | 2026-05-25 | 2026-06-08 | 221 | 265d | 0d | Functional Professionals IT [10%]; Functional Professionals IN [10%]; ERP Expert IT [10%]; ERP Professional IN [10%] | 32h | 3,520 |
| 223 | 2.3.3.3.4 | Perform unit tests | 1.5mo | 2026-06-08 | 2026-07-20 | 222 | 265d |  | Functional Professionals IT [10%]; Functional Professionals IN [10%]; ERP Expert IT [10%]; ERP Professional IN [10%] | 96h | 10,560 |
| 224 | 2.3.3.3.5 | Develop Go/No Go test criteria | 1mo | 2026-06-08 | 2026-07-06 | 222 | 265d | 0d | Functional Professionals IT [10%]; Functional Professionals IN [10%]; ERP Expert IT [10%]; ERP Professional IN [10%] | 64h | 7,040 |
| 225 | 2.3.3.3.6 | Develop Training Materials | 2w | 2026-07-06 | 2026-07-20 | 224 | 265d |  | Functional Professionals IT [10%]; Functional Professionals IN [10%]; ERP Expert IT [10%]; ERP Professional IN [10%] | 32h | 3,520 |

| ID | WBS | Task | Duration | Start | Finish | Predecessors | Total slack | Free slack | Resources | Work | Cost |
| --- | --- | --- | --- | --- | --- | --- | --- | --- | --- | --- | --- |
| 226 | 2.3.3.4 | **Industry 4.0 - MES integration** | 100d | 2026-03-02 | 2026-07-20 |  | 265d |  |  | 416h | 45,760 |
| 227 | 2.3.3.4.1 | Develop technical customization | 1mo | 2026-03-02 | 2026-03-30 | 151 | 265d | 0d | Functional Professionals IT [10%]; Functional Professionals IN [10%]; ERP Expert IT [10%]; ERP Professional IN [10%] | 64h | 7,040 |
| 228 | 2.3.3.4.2 | Develop configuration and Custom code | 2mo | 2026-03-30 | 2026-05-25 | 227 | 265d | 0d | Functional Professionals IT [10%]; Functional Professionals IN [10%]; ERP Expert IT [10%]; ERP Professional IN [10%] | 128h | 14,080 |
| 229 | 2.3.3.4.3 | Create test environment | 2w | 2026-05-25 | 2026-06-08 | 228 | 265d | 0d | Functional Professionals IT [10%]; Functional Professionals IN [10%]; ERP Expert IT [10%]; ERP Professional IN [10%] | 32h | 3,520 |
| 230 | 2.3.3.4.4 | Perform unit tests | 1.5mo | 2026-06-08 | 2026-07-20 | 229 | 265d |  | Functional Professionals IT [10%]; Functional Professionals IN [10%]; ERP Expert IT [10%]; ERP Professional IN [10%] | 96h | 10,560 |
| 231 | 2.3.3.4.5 | Develop Go/No Go test criteria | 1mo | 2026-06-08 | 2026-07-06 | 229 | 265d | 0d | Functional Professionals IT [10%]; Functional Professionals IN [10%]; ERP Expert IT [10%]; ERP Professional IN [10%] | 64h | 7,040 |
| 232 | 2.3.3.4.6 | Develop Training Materials | 2w | 2026-07-06 | 2026-07-20 | 231 | 265d |  | Functional Professionals IT [10%]; Functional Professionals IN [10%]; ERP Expert IT [10%]; ERP Professional IN [10%] | 32h | 3,520 |
| 233 | 2.3.4 | **Purchase** | 100d | 2026-03-02 | 2026-07-20 |  | 265d |  |  | 416h | 45,760 |
| 234 | 2.3.4.1 | **Purchase** | 100d | 2026-03-02 | 2026-07-20 |  | 265d |  |  | 416h | 45,760 |
| 235 | 2.3.4.1.1 | Develop technical customization | 1mo | 2026-03-02 | 2026-03-30 | 151 | 265d | 0d | Functional Professionals IT [10%]; Functional Professionals IN [10%]; ERP Expert IT [10%]; ERP Professional IN [10%] | 64h | 7,040 |
| 236 | 2.3.4.1.2 | Develop configuration and Custom code | 2mo | 2026-03-30 | 2026-05-25 | 235 | 265d | 0d | Functional Professionals IT [10%]; Functional Professionals IN [10%]; ERP Expert IT [10%]; ERP Professional IN [10%] | 128h | 14,080 |
| 237 | 2.3.4.1.3 | Create test environment | 2w | 2026-05-25 | 2026-06-08 | 236 | 265d | 0d | Functional Professionals IT [10%]; Functional Professionals IN [10%]; ERP Expert IT [10%]; ERP Professional IN [10%] | 32h | 3,520 |
| 238 | 2.3.4.1.4 | Perform unit tests | 1.5mo | 2026-06-08 | 2026-07-20 | 237 | 265d |  | Functional Professionals IT [10%]; Functional Professionals IN [10%]; ERP Expert IT [10%]; ERP Professional IN [10%] | 96h | 10,560 |
| 239 | 2.3.4.1.5 | Develop Go/No Go test criteria | 1mo | 2026-06-08 | 2026-07-06 | 237 | 265d | 0d | Functional Professionals IT [10%]; Functional Professionals IN [10%]; ERP Expert IT [10%]; ERP Professional IN [10%] | 64h | 7,040 |
| 240 | 2.3.4.1.6 | Develop Training Materials | 2w | 2026-07-06 | 2026-07-20 | 239 | 265d |  | Functional Professionals IT [10%]; Functional Professionals IN [10%]; ERP Expert IT [10%]; ERP Professional IN [10%] | 32h | 3,520 |
| 241 | 2.3.5 | **Administration** | 100d | 2026-03-02 | 2026-07-20 |  | 265d |  |  | 1248h | 137,280 |
| 242 | 2.3.5.1 | **Invoicing** | 100d | 2026-03-02 | 2026-07-20 |  | 265d |  |  | 416h | 45,760 |
| 243 | 2.3.5.1.1 | Develop technical customization | 1mo | 2026-03-02 | 2026-03-30 | 151 | 265d | 0d | Functional Professionals IT [10%]; Functional Professionals IN [10%]; ERP Expert IT [10%]; ERP Professional IN [10%] | 64h | 7,040 |
| 244 | 2.3.5.1.2 | Develop configuration and Custom code | 2mo | 2026-03-30 | 2026-05-25 | 243 | 265d | 0d | Functional Professionals IT [10%]; Functional Professionals IN [10%]; ERP Expert IT [10%]; ERP Professional IN [10%] | 128h | 14,080 |
| 245 | 2.3.5.1.3 | Create test environment | 2w | 2026-05-25 | 2026-06-08 | 244 | 265d | 0d | Functional Professionals IT [10%]; Functional Professionals IN [10%]; ERP Expert IT [10%]; ERP Professional IN [10%] | 32h | 3,520 |
| 246 | 2.3.5.1.4 | Perform unit tests | 1.5mo | 2026-06-08 | 2026-07-20 | 245 | 265d |  | Functional Professionals IT [10%]; Functional Professionals IN [10%]; ERP Expert IT [10%]; ERP Professional IN [10%] | 96h | 10,560 |
| 247 | 2.3.5.1.5 | Develop Go/No Go test criteria | 1mo | 2026-06-08 | 2026-07-06 | 245 | 265d | 0d | Functional Professionals IT [10%]; Functional Professionals IN [10%]; ERP Expert IT [10%]; ERP Professional IN [10%] | 64h | 7,040 |
| 248 | 2.3.5.1.6 | Develop Training Materials | 2w | 2026-07-06 | 2026-07-20 | 247 | 265d |  | Functional Professionals IT [10%]; Functional Professionals IN [10%]; ERP Expert IT [10%]; ERP Professional IN [10%] | 32h | 3,520 |
| 249 | 2.3.5.2 | **Accounting** | 100d | 2026-03-02 | 2026-07-20 |  | 265d |  |  | 416h | 45,760 |
| 250 | 2.3.5.2.1 | Develop technical customization | 1mo | 2026-03-02 | 2026-03-30 | 151 | 265d | 0d | Functional Professionals IT [10%]; Functional Professionals IN [10%]; ERP Expert IT [10%]; ERP Professional IN [10%] | 64h | 7,040 |
| 251 | 2.3.5.2.2 | Develop configuration and Custom code | 2mo | 2026-03-30 | 2026-05-25 | 250 | 265d | 0d | Functional Professionals IT [10%]; Functional Professionals IN [10%]; ERP Expert IT [10%]; ERP Professional IN [10%] | 128h | 14,080 |
| 252 | 2.3.5.2.3 | Create test environment | 2w | 2026-05-25 | 2026-06-08 | 251 | 265d | 0d | Functional Professionals IT [10%]; Functional Professionals IN [10%]; ERP Expert IT [10%]; ERP Professional IN [10%] | 32h | 3,520 |
| 253 | 2.3.5.2.4 | Perform unit tests | 1.5mo | 2026-06-08 | 2026-07-20 | 252 | 265d |  | Functional Professionals IT [10%]; Functional Professionals IN [10%]; ERP Expert IT [10%]; ERP Professional IN [10%] | 96h | 10,560 |
| 254 | 2.3.5.2.5 | Develop Go/No Go test criteria | 1mo | 2026-06-08 | 2026-07-06 | 252 | 265d | 0d | Functional Professionals IT [10%]; Functional Professionals IN [10%]; ERP Expert IT [10%]; ERP Professional IN [10%] | 64h | 7,040 |
| 255 | 2.3.5.2.6 | Develop Training Materials | 2w | 2026-07-06 | 2026-07-20 | 254 | 265d |  | Functional Professionals IT [10%]; Functional Professionals IN [10%]; ERP Expert IT [10%]; ERP Professional IN [10%] | 32h | 3,520 |

| ID | WBS | Task | Duration | Start | Finish | Predecessors | Total slack | Free slack | Resources | Work | Cost |
| --- | --- | --- | --- | --- | --- | --- | --- | --- | --- | --- | --- |
| 256 | 2.3.5.3 | **Expenses** | 100d | 2026-03-02 | 2026-07-20 |  | 265d |  |  | 416h | 45,760 |
| 257 | 2.3.5.3.1 | Develop technical customization | 1mo | 2026-03-02 | 2026-03-30 | 151 | 265d | 0d | Functional Professionals IT [10%]; Functional Professionals IN [10%]; ERP Expert IT [10%]; ERP Professional IN [10%] | 64h | 7,040 |
| 258 | 2.3.5.3.2 | Develop configuration and Custom code | 2mo | 2026-03-30 | 2026-05-25 | 257 | 265d | 0d | Functional Professionals IT [10%]; Functional Professionals IN [10%]; ERP Expert IT [10%]; ERP Professional IN [10%] | 128h | 14,080 |
| 259 | 2.3.5.3.3 | Create test environment | 2w | 2026-05-25 | 2026-06-08 | 258 | 265d | 0d | Functional Professionals IT [10%]; Functional Professionals IN [10%]; ERP Expert IT [10%]; ERP Professional IN [10%] | 32h | 3,520 |
| 260 | 2.3.5.3.4 | Perform unit tests | 1.5mo | 2026-06-08 | 2026-07-20 | 259 | 265d |  | Functional Professionals IT [10%]; Functional Professionals IN [10%]; ERP Expert IT [10%]; ERP Professional IN [10%] | 96h | 10,560 |
| 261 | 2.3.5.3.5 | Develop Go/No Go test criteria | 1mo | 2026-06-08 | 2026-07-06 | 259 | 265d | 0d | Functional Professionals IT [10%]; Functional Professionals IN [10%]; ERP Expert IT [10%]; ERP Professional IN [10%] | 64h | 7,040 |
| 262 | 2.3.5.3.6 | Develop Training Materials | 2w | 2026-07-06 | 2026-07-20 | 261 | 265d |  | Functional Professionals IT [10%]; Functional Professionals IN [10%]; ERP Expert IT [10%]; ERP Professional IN [10%] | 32h | 3,520 |
| 263 | 2.3.6 | **Human Resources** | 100d | 2026-03-02 | 2026-07-20 |  | 0d |  |  | 1664h | 183,040 |
| 264 | 2.3.6.1 | **Recruitment** | 100d | 2026-03-02 | 2026-07-20 |  | 265d |  |  | 416h | 45,760 |
| 265 | 2.3.6.1.1 | Develop technical customization | 1mo | 2026-03-02 | 2026-03-30 | 151 | 265d | 0d | Functional Professionals IT [10%]; Functional Professionals IN [10%]; ERP Expert IT [10%]; ERP Professional IN [10%] | 64h | 7,040 |
| 266 | 2.3.6.1.2 | Develop configuration and Custom code | 2mo | 2026-03-30 | 2026-05-25 | 265 | 265d | 0d | Functional Professionals IT [10%]; Functional Professionals IN [10%]; ERP Expert IT [10%]; ERP Professional IN [10%] | 128h | 14,080 |
| 267 | 2.3.6.1.3 | Create test environment | 2w | 2026-05-25 | 2026-06-08 | 266 | 265d | 0d | Functional Professionals IT [10%]; Functional Professionals IN [10%]; ERP Expert IT [10%]; ERP Professional IN [10%] | 32h | 3,520 |
| 268 | 2.3.6.1.4 | Perform unit tests | 1.5mo | 2026-06-08 | 2026-07-20 | 267 | 265d |  | Functional Professionals IT [10%]; Functional Professionals IN [10%]; ERP Expert IT [10%]; ERP Professional IN [10%] | 96h | 10,560 |
| 269 | 2.3.6.1.5 | Develop Go/No Go test criteria | 1mo | 2026-06-08 | 2026-07-06 | 267 | 265d | 0d | Functional Professionals IT [10%]; Functional Professionals IN [10%]; ERP Expert IT [10%]; ERP Professional IN [10%] | 64h | 7,040 |
| 270 | 2.3.6.1.6 | Develop Training Materials | 2w | 2026-07-06 | 2026-07-20 | 269 | 265d |  | Functional Professionals IT [10%]; Functional Professionals IN [10%]; ERP Expert IT [10%]; ERP Professional IN [10%] | 32h | 3,520 |
| 271 | 2.3.6.2 | **Talent** | 100d | 2026-03-02 | 2026-07-20 |  | 265d |  |  | 416h | 45,760 |
| 272 | 2.3.6.2.1 | Develop technical customization | 1mo | 2026-03-02 | 2026-03-30 | 151 | 265d | 0d | Functional Professionals IT [10%]; Functional Professionals IN [10%]; ERP Expert IT [10%]; ERP Professional IN [10%] | 64h | 7,040 |
| 273 | 2.3.6.2.2 | Develop configuration and Custom code | 2mo | 2026-03-30 | 2026-05-25 | 272 | 265d | 0d | Functional Professionals IT [10%]; Functional Professionals IN [10%]; ERP Expert IT [10%]; ERP Professional IN [10%] | 128h | 14,080 |
| 274 | 2.3.6.2.3 | Create test environment | 2w | 2026-05-25 | 2026-06-08 | 273 | 265d | 0d | Functional Professionals IT [10%]; Functional Professionals IN [10%]; ERP Expert IT [10%]; ERP Professional IN [10%] | 32h | 3,520 |
| 275 | 2.3.6.2.4 | Perform unit tests | 1.5mo | 2026-06-08 | 2026-07-20 | 274 | 265d |  | Functional Professionals IT [10%]; Functional Professionals IN [10%]; ERP Expert IT [10%]; ERP Professional IN [10%] | 96h | 10,560 |
| 276 | 2.3.6.2.5 | Develop Go/No Go test criteria | 1mo | 2026-06-08 | 2026-07-06 | 274 | 265d | 0d | Functional Professionals IT [10%]; Functional Professionals IN [10%]; ERP Expert IT [10%]; ERP Professional IN [10%] | 64h | 7,040 |
| 277 | 2.3.6.2.6 | Develop Training Materials | 2w | 2026-07-06 | 2026-07-20 | 276 | 265d |  | Functional Professionals IT [10%]; Functional Professionals IN [10%]; ERP Expert IT [10%]; ERP Professional IN [10%] | 32h | 3,520 |
| 278 | 2.3.6.3 | **eLearning** | 100d | 2026-03-02 | 2026-07-20 |  | 265d |  |  | 416h | 45,760 |
| 279 | 2.3.6.3.1 | Develop technical customization | 1mo | 2026-03-02 | 2026-03-30 | 151 | 265d | 0d | Functional Professionals IT [10%]; Functional Professionals IN [10%]; ERP Expert IT [10%]; ERP Professional IN [10%] | 64h | 7,040 |
| 280 | 2.3.6.3.2 | Develop configuration and Custom code | 2mo | 2026-03-30 | 2026-05-25 | 279 | 265d | 0d | Functional Professionals IT [10%]; Functional Professionals IN [10%]; ERP Expert IT [10%]; ERP Professional IN [10%] | 128h | 14,080 |
| 281 | 2.3.6.3.3 | Create test environment | 2w | 2026-05-25 | 2026-06-08 | 280 | 265d | 0d | Functional Professionals IT [10%]; Functional Professionals IN [10%]; ERP Expert IT [10%]; ERP Professional IN [10%] | 32h | 3,520 |
| 282 | 2.3.6.3.4 | Perform unit tests | 1.5mo | 2026-06-08 | 2026-07-20 | 281 | 265d |  | Functional Professionals IT [10%]; Functional Professionals IN [10%]; ERP Expert IT [10%]; ERP Professional IN [10%] | 96h | 10,560 |
| 283 | 2.3.6.3.5 | Develop Go/No Go test criteria | 1mo | 2026-06-08 | 2026-07-06 | 281 | 265d | 0d | Functional Professionals IT [10%]; Functional Professionals IN [10%]; ERP Expert IT [10%]; ERP Professional IN [10%] | 64h | 7,040 |
| 284 | 2.3.6.3.6 | Develop Training Materials | 2w | 2026-07-06 | 2026-07-20 | 283 | 265d |  | Functional Professionals IT [10%]; Functional Professionals IN [10%]; ERP Expert IT [10%]; ERP Professional IN [10%] | 32h | 3,520 |

| ID | WBS | Task | Duration | Start | Finish | Predecessors | Total slack | Free slack | Resources | Work | Cost |
| --- | --- | --- | --- | --- | --- | --- | --- | --- | --- | --- | --- |
| 285 | 2.3.6.4 | **Payroll** | 100d | 2026-03-02 | 2026-07-20 |  | 0d |  |  | 416h | 45,760 |
| 286 | 2.3.6.4.1 | Develop technical customization | 1mo | 2026-03-02 | 2026-03-30 | 151 | 0d |  | Functional Professionals IT [10%]; Functional Professionals IN [10%]; ERP Expert IT [10%]; ERP Professional IN [10%] | 64h | 7,040 |
| 287 | 2.3.6.4.2 | Develop configuration and Custom code | 2mo | 2026-03-30 | 2026-05-25 | 286 | 0d |  | Functional Professionals IT [10%]; Functional Professionals IN [10%]; ERP Expert IT [10%]; ERP Professional IN [10%] | 128h | 14,080 |
| 288 | 2.3.6.4.3 | Create test environment | 2w | 2026-05-25 | 2026-06-08 | 287 | 0d |  | Functional Professionals IT [10%]; Functional Professionals IN [10%]; ERP Expert IT [10%]; ERP Professional IN [10%] | 32h | 3,520 |
| 289 | 2.3.6.4.4 | Perform unit tests | 1.5mo | 2026-06-08 | 2026-07-20 | 288 | 265d |  | Functional Professionals IT [10%]; Functional Professionals IN [10%]; ERP Expert IT [10%]; ERP Professional IN [10%] | 96h | 10,560 |
| 290 | 2.3.6.4.5 | Develop Go/No Go test criteria | 1mo | 2026-06-08 | 2026-07-06 | 288 | 0d |  | Functional Professionals IT [10%]; Functional Professionals IN [10%]; ERP Expert IT [10%]; ERP Professional IN [10%] | 64h | 7,040 |
| 291 | 2.3.6.4.6 | Develop Training Materials | 2w | 2026-07-06 | 2026-07-20 | 290 | 0d |  | Functional Professionals IT [10%]; Functional Professionals IN [10%]; ERP Expert IT [10%]; ERP Professional IN [10%] | 32h | 3,520 |
| 292 | 2.4 | **Realize - Test** | 70d | 2026-07-20 | 2026-10-26 |  | 0d |  |  | 7448h | 861,840 |
| 293 | 2.4.1 | **Commercial** | 70d | 2026-07-20 | 2026-10-26 |  | 195d |  |  | 784h | 90,720 |
| 294 | 2.4.1.1 | **CRM** | 70d | 2026-07-20 | 2026-10-26 |  | 195d |  |  | 392h | 45,360 |
| 295 | 2.4.1.1.1 | Conduct integration tests | 3w | 2026-07-20 | 2026-08-10 | 291 | 195d | 0d | Functional Managers IT [10%]; Functional Professionals IT [10%]; Functional Managers IN [10%]; Functional Professionals IN [10%]; ERP Expert IT [10%]; Business Analyst IT [10%]; ERP Professional IN [10%] | 84h | 9,720 |
| 296 | 2.4.1.1.2 | Identify and resolve issues | 2w | 2026-08-10 | 2026-08-24 | 295 | 195d | 0d | Functional Managers IT [10%]; Functional Professionals IT [10%]; Functional Managers IN [10%]; Functional Professionals IN [10%]; ERP Expert IT [10%]; Business Analyst IT [10%]; ERP Professional IN [10%] | 56h | 6,480 |
| 297 | 2.4.1.1.3 | Data Migration Testing | 3w | 2026-08-24 | 2026-09-14 | 296 | 195d | 0d | Functional Managers IT [10%]; Functional Professionals IT [10%]; Functional Managers IN [10%]; Functional Professionals IN [10%]; ERP Expert IT [10%]; Business Analyst IT [10%]; ERP Professional IN [10%] | 84h | 9,720 |
| 298 | 2.4.1.1.4 | Conduct UAT test | 4w | 2026-09-14 | 2026-10-12 | 297 | 195d | 0d | Functional Managers IT [10%]; Functional Professionals IT [10%]; Functional Managers IN [10%]; Functional Professionals IN [10%]; ERP Expert IT [10%]; Business Analyst IT [10%]; ERP Professional IN [10%] | 112h | 12,960 |
| 299 | 2.4.1.1.5 | Obtain User Approval | 2w | 2026-10-12 | 2026-10-26 | 298 | 195d |  | Functional Managers IT [10%]; Functional Professionals IT [10%]; Functional Managers IN [10%]; Functional Professionals IN [10%]; ERP Expert IT [10%]; Business Analyst IT [10%]; ERP Professional IN [10%] | 56h | 6,480 |
| 300 | 2.4.1.2 | **Sales** | 70d | 2026-07-20 | 2026-10-26 |  | 195d |  |  | 392h | 45,360 |
| 301 | 2.4.1.2.1 | Conduct integration tests | 3w | 2026-07-20 | 2026-08-10 | 291 | 195d | 0d | Functional Managers IT [10%]; Functional Professionals IT [10%]; Functional Managers IN [10%]; Functional Professionals IN [10%]; ERP Expert IT [10%]; Business Analyst IT [10%]; ERP Professional IN [10%] | 84h | 9,720 |
| 302 | 2.4.1.2.2 | Identify and resolve issues | 2w | 2026-08-10 | 2026-08-24 | 301 | 195d | 0d | Functional Managers IT [10%]; Functional Professionals IT [10%]; Functional Managers IN [10%]; Functional Professionals IN [10%]; ERP Expert IT [10%]; Business Analyst IT [10%]; ERP Professional IN [10%] | 56h | 6,480 |
| 303 | 2.4.1.2.3 | Data Migration Testing | 3w | 2026-08-24 | 2026-09-14 | 302 | 195d | 0d | Functional Managers IT [10%]; Functional Professionals IT [10%]; Functional Managers IN [10%]; Functional Professionals IN [10%]; ERP Expert IT [10%]; Business Analyst IT [10%]; ERP Professional IN [10%] | 84h | 9,720 |
| 304 | 2.4.1.2.4 | Conduct UAT test | 4w | 2026-09-14 | 2026-10-12 | 303 | 195d | 0d | Functional Managers IT [10%]; Functional Professionals IT [10%]; Functional Managers IN [10%]; Functional Professionals IN [10%]; ERP Expert IT [10%]; Business Analyst IT [10%]; ERP Professional IN [10%] | 112h | 12,960 |
| 305 | 2.4.1.2.5 | Obtain User Approval | 2w | 2026-10-12 | 2026-10-26 | 304 | 195d |  | Functional Managers IT [10%]; Functional Professionals IT [10%]; Functional Managers IN [10%]; Functional Professionals IN [10%]; ERP Expert IT [10%]; Business Analyst IT [10%]; ERP Professional IN [10%] | 56h | 6,480 |
| 306 | 2.4.2 | **Engineering** | 70d | 2026-07-20 | 2026-10-26 |  | 195d |  |  | 1960h | 226,800 |
| 307 | 2.4.2.1 | **Project** | 70d | 2026-07-20 | 2026-10-26 |  | 195d |  |  | 392h | 45,360 |
| 308 | 2.4.2.1.1 | Conduct integration tests | 3w | 2026-07-20 | 2026-08-10 | 291 | 195d | 0d | Functional Managers IT [10%]; Functional Professionals IT [10%]; Functional Managers IN [10%]; Functional Professionals IN [10%]; ERP Expert IT [10%]; Business Analyst IT [10%]; ERP Professional IN [10%] | 84h | 9,720 |
| 309 | 2.4.2.1.2 | Identify and resolve issues | 2w | 2026-08-10 | 2026-08-24 | 308 | 195d | 0d | Functional Managers IT [10%]; Functional Professionals IT [10%]; Functional Managers IN [10%]; Functional Professionals IN [10%]; ERP Expert IT [10%]; Business Analyst IT [10%]; ERP Professional IN [10%] | 56h | 6,480 |
| 310 | 2.4.2.1.3 | Data Migration Testing | 3w | 2026-08-24 | 2026-09-14 | 309 | 195d | 0d | Functional Managers IT [10%]; Functional Professionals IT [10%]; Functional Managers IN [10%]; Functional Professionals IN [10%]; ERP Expert IT [10%]; Business Analyst IT [10%]; ERP Professional IN [10%] | 84h | 9,720 |
| 311 | 2.4.2.1.4 | Conduct UAT test | 4w | 2026-09-14 | 2026-10-12 | 310 | 195d | 0d | Functional Managers IT [10%]; Functional Professionals IT [10%]; Functional Managers IN [10%]; Functional Professionals IN [10%]; ERP Expert IT [10%]; Business Analyst IT [10%]; ERP Professional IN [10%] | 112h | 12,960 |
| 312 | 2.4.2.1.5 | Obtain User Approval | 2w | 2026-10-12 | 2026-10-26 | 311 | 195d |  | Functional Managers IT [10%]; Functional Professionals IT [10%]; Functional Managers IN [10%]; Functional Professionals IN [10%]; ERP Expert IT [10%]; Business Analyst IT [10%]; ERP Professional IN [10%] | 56h | 6,480 |

| ID | WBS | Task | Duration | Start | Finish | Predecessors | Total slack | Free slack | Resources | Work | Cost |
| --- | --- | --- | --- | --- | --- | --- | --- | --- | --- | --- | --- |
| 313 | 2.4.2.2 | **Product Life-cyle Management** | 70d | 2026-07-20 | 2026-10-26 |  | 195d |  |  | 392h | 45,360 |
| 314 | 2.4.2.2.1 | Conduct integration tests | 3w | 2026-07-20 | 2026-08-10 | 291 | 195d | 0d | Functional Managers IT [10%]; Functional Professionals IT [10%]; Functional Managers IN [10%]; Functional Professionals IN [10%]; ERP Expert IT [10%]; Business Analyst IT [10%]; ERP Professional IN [10%] | 84h | 9,720 |
| 315 | 2.4.2.2.2 | Identify and resolve issues | 2w | 2026-08-10 | 2026-08-24 | 314 | 195d | 0d | Functional Managers IT [10%]; Functional Professionals IT [10%]; Functional Managers IN [10%]; Functional Professionals IN [10%]; ERP Expert IT [10%]; Business Analyst IT [10%]; ERP Professional IN [10%] | 56h | 6,480 |
| 316 | 2.4.2.2.3 | Data Migration Testing | 3w | 2026-08-24 | 2026-09-14 | 315 | 195d | 0d | Functional Managers IT [10%]; Functional Professionals IT [10%]; Functional Managers IN [10%]; Functional Professionals IN [10%]; ERP Expert IT [10%]; Business Analyst IT [10%]; ERP Professional IN [10%] | 84h | 9,720 |
| 317 | 2.4.2.2.4 | Conduct UAT test | 4w | 2026-09-14 | 2026-10-12 | 316 | 195d | 0d | Functional Managers IT [10%]; Functional Professionals IT [10%]; Functional Managers IN [10%]; Functional Professionals IN [10%]; ERP Expert IT [10%]; Business Analyst IT [10%]; ERP Professional IN [10%] | 112h | 12,960 |
| 318 | 2.4.2.2.5 | Obtain User Approval | 2w | 2026-10-12 | 2026-10-26 | 317 | 195d |  | Functional Managers IT [10%]; Functional Professionals IT [10%]; Functional Managers IN [10%]; Functional Professionals IN [10%]; ERP Expert IT [10%]; Business Analyst IT [10%]; ERP Professional IN [10%] | 56h | 6,480 |
| 319 | 2.4.2.3 | **Quality** | 70d | 2026-07-20 | 2026-10-26 |  | 195d |  |  | 392h | 45,360 |
| 320 | 2.4.2.3.1 | Conduct integration tests | 3w | 2026-07-20 | 2026-08-10 | 291 | 195d | 0d | Functional Managers IT [10%]; Functional Professionals IT [10%]; Functional Managers IN [10%]; Functional Professionals IN [10%]; ERP Expert IT [10%]; Business Analyst IT [10%]; ERP Professional IN [10%] | 84h | 9,720 |
| 321 | 2.4.2.3.2 | Identify and resolve issues | 2w | 2026-08-10 | 2026-08-24 | 320 | 195d | 0d | Functional Managers IT [10%]; Functional Professionals IT [10%]; Functional Managers IN [10%]; Functional Professionals IN [10%]; ERP Expert IT [10%]; Business Analyst IT [10%]; ERP Professional IN [10%] | 56h | 6,480 |
| 322 | 2.4.2.3.3 | Data Migration Testing | 3w | 2026-08-24 | 2026-09-14 | 321 | 195d | 0d | Functional Managers IT [10%]; Functional Professionals IT [10%]; Functional Managers IN [10%]; Functional Professionals IN [10%]; ERP Expert IT [10%]; Business Analyst IT [10%]; ERP Professional IN [10%] | 84h | 9,720 |
| 323 | 2.4.2.3.4 | Conduct UAT test | 4w | 2026-09-14 | 2026-10-12 | 322 | 195d | 0d | Functional Managers IT [10%]; Functional Professionals IT [10%]; Functional Managers IN [10%]; Functional Professionals IN [10%]; ERP Expert IT [10%]; Business Analyst IT [10%]; ERP Professional IN [10%] | 112h | 12,960 |
| 324 | 2.4.2.3.5 | Obtain User Approval | 2w | 2026-10-12 | 2026-10-26 | 323 | 195d |  | Functional Managers IT [10%]; Functional Professionals IT [10%]; Functional Managers IN [10%]; Functional Professionals IN [10%]; ERP Expert IT [10%]; Business Analyst IT [10%]; ERP Professional IN [10%] | 56h | 6,480 |
| 325 | 2.4.2.4 | **Timesheets** | 70d | 2026-07-20 | 2026-10-26 |  | 195d |  |  | 392h | 45,360 |
| 326 | 2.4.2.4.1 | Conduct integration tests | 3w | 2026-07-20 | 2026-08-10 | 291 | 195d | 0d | Functional Managers IT [10%]; Functional Professionals IT [10%]; Functional Managers IN [10%]; Functional Professionals IN [10%]; ERP Expert IT [10%]; Business Analyst IT [10%]; ERP Professional IN [10%] | 84h | 9,720 |
| 327 | 2.4.2.4.2 | Identify and resolve issues | 2w | 2026-08-10 | 2026-08-24 | 326 | 195d | 0d | Functional Managers IT [10%]; Functional Professionals IT [10%]; Functional Managers IN [10%]; Functional Professionals IN [10%]; ERP Expert IT [10%]; Business Analyst IT [10%]; ERP Professional IN [10%] | 56h | 6,480 |
| 328 | 2.4.2.4.3 | Data Migration Testing | 3w | 2026-08-24 | 2026-09-14 | 327 | 195d | 0d | Functional Managers IT [10%]; Functional Professionals IT [10%]; Functional Managers IN [10%]; Functional Professionals IN [10%]; ERP Expert IT [10%]; Business Analyst IT [10%]; ERP Professional IN [10%] | 84h | 9,720 |
| 329 | 2.4.2.4.4 | Conduct UAT test | 4w | 2026-09-14 | 2026-10-12 | 328 | 195d | 0d | Functional Managers IT [10%]; Functional Professionals IT [10%]; Functional Managers IN [10%]; Functional Professionals IN [10%]; ERP Expert IT [10%]; Business Analyst IT [10%]; ERP Professional IN [10%] | 112h | 12,960 |
| 330 | 2.4.2.4.5 | Obtain User Approval | 2w | 2026-10-12 | 2026-10-26 | 329 | 195d |  | Functional Managers IT [10%]; Functional Professionals IT [10%]; Functional Managers IN [10%]; Functional Professionals IN [10%]; ERP Expert IT [10%]; Business Analyst IT [10%]; ERP Professional IN [10%] | 56h | 6,480 |
| 331 | 2.4.2.5 | **Documents** | 70d | 2026-07-20 | 2026-10-26 |  | 195d |  |  | 392h | 45,360 |
| 332 | 2.4.2.5.1 | Conduct integration tests | 3w | 2026-07-20 | 2026-08-10 | 291 | 195d | 0d | Functional Managers IT [10%]; Functional Professionals IT [10%]; Functional Managers IN [10%]; Functional Professionals IN [10%]; ERP Expert IT [10%]; Business Analyst IT [10%]; ERP Professional IN [10%] | 84h | 9,720 |
| 333 | 2.4.2.5.2 | Identify and resolve issues | 2w | 2026-08-10 | 2026-08-24 | 332 | 195d | 0d | Functional Managers IT [10%]; Functional Professionals IT [10%]; Functional Managers IN [10%]; Functional Professionals IN [10%]; ERP Expert IT [10%]; Business Analyst IT [10%]; ERP Professional IN [10%] | 56h | 6,480 |
| 334 | 2.4.2.5.3 | Data Migration Testing | 3w | 2026-08-24 | 2026-09-14 | 333 | 195d | 0d | Functional Managers IT [10%]; Functional Professionals IT [10%]; Functional Managers IN [10%]; Functional Professionals IN [10%]; ERP Expert IT [10%]; Business Analyst IT [10%]; ERP Professional IN [10%] | 84h | 9,720 |
| 335 | 2.4.2.5.4 | Conduct UAT test | 4w | 2026-09-14 | 2026-10-12 | 334 | 195d | 0d | Functional Managers IT [10%]; Functional Professionals IT [10%]; Functional Managers IN [10%]; Functional Professionals IN [10%]; ERP Expert IT [10%]; Business Analyst IT [10%]; ERP Professional IN [10%] | 112h | 12,960 |
| 336 | 2.4.2.5.5 | Obtain User Approval | 2w | 2026-10-12 | 2026-10-26 | 335 | 195d |  | Functional Managers IT [10%]; Functional Professionals IT [10%]; Functional Managers IN [10%]; Functional Professionals IN [10%]; ERP Expert IT [10%]; Business Analyst IT [10%]; ERP Professional IN [10%] | 56h | 6,480 |

| ID | WBS | Task | Duration | Start | Finish | Predecessors | Total slack | Free slack | Resources | Work | Cost |
| --- | --- | --- | --- | --- | --- | --- | --- | --- | --- | --- | --- |
| 337 | 2.4.3 | **Manufacturing** | 70d | 2026-07-20 | 2026-10-26 |  | 195d |  |  | 1568h | 181,440 |
| 338 | 2.4.3.1 | **Production Planning and Materials Requirement** | 70d | 2026-07-20 | 2026-10-26 |  | 195d |  |  | 392h | 45,360 |
| 339 | 2.4.3.1.1 | Conduct integration tests | 3w | 2026-07-20 | 2026-08-10 | 291 | 195d | 0d | Functional Managers IT [10%]; Functional Professionals IT [10%]; Functional Managers IN [10%]; Functional Professionals IN [10%]; ERP Expert IT [10%]; Business Analyst IT [10%]; ERP Professional IN [10%] | 84h | 9,720 |
| 340 | 2.4.3.1.2 | Identify and resolve issues | 2w | 2026-08-10 | 2026-08-24 | 339 | 195d | 0d | Functional Managers IT [10%]; Functional Professionals IT [10%]; Functional Managers IN [10%]; Functional Professionals IN [10%]; ERP Expert IT [10%]; Business Analyst IT [10%]; ERP Professional IN [10%] | 56h | 6,480 |
| 341 | 2.4.3.1.3 | Data Migration Testing | 3w | 2026-08-24 | 2026-09-14 | 340 | 195d | 0d | Functional Managers IT [10%]; Functional Professionals IT [10%]; Functional Managers IN [10%]; Functional Professionals IN [10%]; ERP Expert IT [10%]; Business Analyst IT [10%]; ERP Professional IN [10%] | 84h | 9,720 |
| 342 | 2.4.3.1.4 | Conduct UAT test | 4w | 2026-09-14 | 2026-10-12 | 341 | 195d | 0d | Functional Managers IT [10%]; Functional Professionals IT [10%]; Functional Managers IN [10%]; Functional Professionals IN [10%]; ERP Expert IT [10%]; Business Analyst IT [10%]; ERP Professional IN [10%] | 112h | 12,960 |
| 343 | 2.4.3.1.5 | Obtain User Approval | 2w | 2026-10-12 | 2026-10-26 | 342 | 195d |  | Functional Managers IT [10%]; Functional Professionals IT [10%]; Functional Managers IN [10%]; Functional Professionals IN [10%]; ERP Expert IT [10%]; Business Analyst IT [10%]; ERP Professional IN [10%] | 56h | 6,480 |
| 344 | 2.4.3.2 | **Inventory** | 70d | 2026-07-20 | 2026-10-26 |  | 195d |  |  | 392h | 45,360 |
| 345 | 2.4.3.2.1 | Conduct integration tests | 3w | 2026-07-20 | 2026-08-10 | 291 | 195d | 0d | Functional Managers IT [10%]; Functional Professionals IT [10%]; Functional Managers IN [10%]; Functional Professionals IN [10%]; ERP Expert IT [10%]; Business Analyst IT [10%]; ERP Professional IN [10%] | 84h | 9,720 |
| 346 | 2.4.3.2.2 | Identify and resolve issues | 2w | 2026-08-10 | 2026-08-24 | 345 | 195d | 0d | Functional Managers IT [10%]; Functional Professionals IT [10%]; Functional Managers IN [10%]; Functional Professionals IN [10%]; ERP Expert IT [10%]; Business Analyst IT [10%]; ERP Professional IN [10%] | 56h | 6,480 |
| 347 | 2.4.3.2.3 | Data Migration Testing | 3w | 2026-08-24 | 2026-09-14 | 346 | 195d | 0d | Functional Managers IT [10%]; Functional Professionals IT [10%]; Functional Managers IN [10%]; Functional Professionals IN [10%]; ERP Expert IT [10%]; Business Analyst IT [10%]; ERP Professional IN [10%] | 84h | 9,720 |
| 348 | 2.4.3.2.4 | Conduct UAT test | 4w | 2026-09-14 | 2026-10-12 | 347 | 195d | 0d | Functional Managers IT [10%]; Functional Professionals IT [10%]; Functional Managers IN [10%]; Functional Professionals IN [10%]; ERP Expert IT [10%]; Business Analyst IT [10%]; ERP Professional IN [10%] | 112h | 12,960 |
| 349 | 2.4.3.2.5 | Obtain User Approval | 2w | 2026-10-12 | 2026-10-26 | 348 | 195d |  | Functional Managers IT [10%]; Functional Professionals IT [10%]; Functional Managers IN [10%]; Functional Professionals IN [10%]; ERP Expert IT [10%]; Business Analyst IT [10%]; ERP Professional IN [10%] | 56h | 6,480 |
| 350 | 2.4.3.3 | **Maintenance** | 70d | 2026-07-20 | 2026-10-26 |  | 195d |  |  | 392h | 45,360 |
| 351 | 2.4.3.3.1 | Conduct integration tests | 3w | 2026-07-20 | 2026-08-10 | 291 | 195d | 0d | Functional Managers IT [10%]; Functional Professionals IT [10%]; Functional Managers IN [10%]; Functional Professionals IN [10%]; ERP Expert IT [10%]; Business Analyst IT [10%]; ERP Professional IN [10%] | 84h | 9,720 |
| 352 | 2.4.3.3.2 | Identify and resolve issues | 2w | 2026-08-10 | 2026-08-24 | 351 | 195d | 0d | Functional Managers IT [10%]; Functional Professionals IT [10%]; Functional Managers IN [10%]; Functional Professionals IN [10%]; ERP Expert IT [10%]; Business Analyst IT [10%]; ERP Professional IN [10%] | 56h | 6,480 |
| 353 | 2.4.3.3.3 | Data Migration Testing | 3w | 2026-08-24 | 2026-09-14 | 352 | 195d | 0d | Functional Managers IT [10%]; Functional Professionals IT [10%]; Functional Managers IN [10%]; Functional Professionals IN [10%]; ERP Expert IT [10%]; Business Analyst IT [10%]; ERP Professional IN [10%] | 84h | 9,720 |
| 354 | 2.4.3.3.4 | Conduct UAT test | 4w | 2026-09-14 | 2026-10-12 | 353 | 195d | 0d | Functional Managers IT [10%]; Functional Professionals IT [10%]; Functional Managers IN [10%]; Functional Professionals IN [10%]; ERP Expert IT [10%]; Business Analyst IT [10%]; ERP Professional IN [10%] | 112h | 12,960 |
| 355 | 2.4.3.3.5 | Obtain User Approval | 2w | 2026-10-12 | 2026-10-26 | 354 | 195d |  | Functional Managers IT [10%]; Functional Professionals IT [10%]; Functional Managers IN [10%]; Functional Professionals IN [10%]; ERP Expert IT [10%]; Business Analyst IT [10%]; ERP Professional IN [10%] | 56h | 6,480 |
| 356 | 2.4.3.4 | **Industry 4.0 - MES integration** | 70d | 2026-07-20 | 2026-10-26 |  | 195d |  |  | 392h | 45,360 |
| 357 | 2.4.3.4.1 | Conduct integration tests | 3w | 2026-07-20 | 2026-08-10 | 291 | 195d | 0d | Functional Managers IT [10%]; Functional Professionals IT [10%]; Functional Managers IN [10%]; Functional Professionals IN [10%]; ERP Expert IT [10%]; Business Analyst IT [10%]; ERP Professional IN [10%] | 84h | 9,720 |
| 358 | 2.4.3.4.2 | Identify and resolve issues | 2w | 2026-08-10 | 2026-08-24 | 357 | 195d | 0d | Functional Managers IT [10%]; Functional Professionals IT [10%]; Functional Managers IN [10%]; Functional Professionals IN [10%]; ERP Expert IT [10%]; Business Analyst IT [10%]; ERP Professional IN [10%] | 56h | 6,480 |
| 359 | 2.4.3.4.3 | Data Migration Testing | 3w | 2026-08-24 | 2026-09-14 | 358 | 195d | 0d | Functional Managers IT [10%]; Functional Professionals IT [10%]; Functional Managers IN [10%]; Functional Professionals IN [10%]; ERP Expert IT [10%]; Business Analyst IT [10%]; ERP Professional IN [10%] | 84h | 9,720 |
| 360 | 2.4.3.4.4 | Conduct UAT test | 4w | 2026-09-14 | 2026-10-12 | 359 | 195d | 0d | Functional Managers IT [10%]; Functional Professionals IT [10%]; Functional Managers IN [10%]; Functional Professionals IN [10%]; ERP Expert IT [10%]; Business Analyst IT [10%]; ERP Professional IN [10%] | 112h | 12,960 |
| 361 | 2.4.3.4.5 | Obtain User Approval | 2w | 2026-10-12 | 2026-10-26 | 360 | 195d |  | Functional Managers IT [10%]; Functional Professionals IT [10%]; Functional Managers IN [10%]; Functional Professionals IN [10%]; ERP Expert IT [10%]; Business Analyst IT [10%]; ERP Professional IN [10%] | 56h | 6,480 |

| ID | WBS | Task | Duration | Start | Finish | Predecessors | Total slack | Free slack | Resources | Work | Cost |
| --- | --- | --- | --- | --- | --- | --- | --- | --- | --- | --- | --- |
| 362 | 2.4.4 | **Purchase** | 70d | 2026-07-20 | 2026-10-26 |  | 195d |  |  | 392h | 45,360 |
| 363 | 2.4.4.1 | **Purchase** | 70d | 2026-07-20 | 2026-10-26 |  | 195d |  |  | 392h | 45,360 |
| 364 | 2.4.4.1.1 | Conduct integration tests | 3w | 2026-07-20 | 2026-08-10 | 291 | 195d | 0d | Functional Managers IT [10%]; Functional Professionals IT [10%]; Functional Managers IN [10%]; Functional Professionals IN [10%]; ERP Expert IT [10%]; Business Analyst IT [10%]; ERP Professional IN [10%] | 84h | 9,720 |
| 365 | 2.4.4.1.2 | Identify and resolve issues | 2w | 2026-08-10 | 2026-08-24 | 364 | 195d | 0d | Functional Managers IT [10%]; Functional Professionals IT [10%]; Functional Managers IN [10%]; Functional Professionals IN [10%]; ERP Expert IT [10%]; Business Analyst IT [10%]; ERP Professional IN [10%] | 56h | 6,480 |
| 366 | 2.4.4.1.3 | Data Migration Testing | 3w | 2026-08-24 | 2026-09-14 | 365 | 195d | 0d | Functional Managers IT [10%]; Functional Professionals IT [10%]; Functional Managers IN [10%]; Functional Professionals IN [10%]; ERP Expert IT [10%]; Business Analyst IT [10%]; ERP Professional IN [10%] | 84h | 9,720 |
| 367 | 2.4.4.1.4 | Conduct UAT test | 4w | 2026-09-14 | 2026-10-12 | 366 | 195d | 0d | Functional Managers IT [10%]; Functional Professionals IT [10%]; Functional Managers IN [10%]; Functional Professionals IN [10%]; ERP Expert IT [10%]; Business Analyst IT [10%]; ERP Professional IN [10%] | 112h | 12,960 |
| 368 | 2.4.4.1.5 | Obtain User Approval | 2w | 2026-10-12 | 2026-10-26 | 367 | 195d |  | Functional Managers IT [10%]; Functional Professionals IT [10%]; Functional Managers IN [10%]; Functional Professionals IN [10%]; ERP Expert IT [10%]; Business Analyst IT [10%]; ERP Professional IN [10%] | 56h | 6,480 |
| 369 | 2.4.5 | **Administration** | 70d | 2026-07-20 | 2026-10-26 |  | 195d |  |  | 1176h | 136,080 |
| 370 | 2.4.5.1 | **Invoicing** | 70d | 2026-07-20 | 2026-10-26 |  | 195d |  |  | 392h | 45,360 |
| 371 | 2.4.5.1.1 | Conduct integration tests | 3w | 2026-07-20 | 2026-08-10 | 291 | 195d | 0d | Functional Managers IT [10%]; Functional Professionals IT [10%]; Functional Managers IN [10%]; Functional Professionals IN [10%]; ERP Expert IT [10%]; Business Analyst IT [10%]; ERP Professional IN [10%] | 84h | 9,720 |
| 372 | 2.4.5.1.2 | Identify and resolve issues | 2w | 2026-08-10 | 2026-08-24 | 371 | 195d | 0d | Functional Managers IT [10%]; Functional Professionals IT [10%]; Functional Managers IN [10%]; Functional Professionals IN [10%]; ERP Expert IT [10%]; Business Analyst IT [10%]; ERP Professional IN [10%] | 56h | 6,480 |
| 373 | 2.4.5.1.3 | Data Migration Testing | 3w | 2026-08-24 | 2026-09-14 | 372 | 195d | 0d | Functional Managers IT [10%]; Functional Professionals IT [10%]; Functional Managers IN [10%]; Functional Professionals IN [10%]; ERP Expert IT [10%]; Business Analyst IT [10%]; ERP Professional IN [10%] | 84h | 9,720 |
| 374 | 2.4.5.1.4 | Conduct UAT test | 4w | 2026-09-14 | 2026-10-12 | 373 | 195d | 0d | Functional Managers IT [10%]; Functional Professionals IT [10%]; Functional Managers IN [10%]; Functional Professionals IN [10%]; ERP Expert IT [10%]; Business Analyst IT [10%]; ERP Professional IN [10%] | 112h | 12,960 |
| 375 | 2.4.5.1.5 | Obtain User Approval | 2w | 2026-10-12 | 2026-10-26 | 374 | 195d |  | Functional Managers IT [10%]; Functional Professionals IT [10%]; Functional Managers IN [10%]; Functional Professionals IN [10%]; ERP Expert IT [10%]; Business Analyst IT [10%]; ERP Professional IN [10%] | 56h | 6,480 |
| 376 | 2.4.5.2 | **Accounting** | 70d | 2026-07-20 | 2026-10-26 |  | 195d |  |  | 392h | 45,360 |
| 377 | 2.4.5.2.1 | Conduct integration tests | 3w | 2026-07-20 | 2026-08-10 | 291 | 195d | 0d | Functional Managers IT [10%]; Functional Professionals IT [10%]; Functional Managers IN [10%]; Functional Professionals IN [10%]; ERP Expert IT [10%]; Business Analyst IT [10%]; ERP Professional IN [10%] | 84h | 9,720 |
| 378 | 2.4.5.2.2 | Identify and resolve issues | 2w | 2026-08-10 | 2026-08-24 | 377 | 195d | 0d | Functional Managers IT [10%]; Functional Professionals IT [10%]; Functional Managers IN [10%]; Functional Professionals IN [10%]; ERP Expert IT [10%]; Business Analyst IT [10%]; ERP Professional IN [10%] | 56h | 6,480 |
| 379 | 2.4.5.2.3 | Data Migration Testing | 3w | 2026-08-24 | 2026-09-14 | 378 | 195d | 0d | Functional Managers IT [10%]; Functional Professionals IT [10%]; Functional Managers IN [10%]; Functional Professionals IN [10%]; ERP Expert IT [10%]; Business Analyst IT [10%]; ERP Professional IN [10%] | 84h | 9,720 |
| 380 | 2.4.5.2.4 | Conduct UAT test | 4w | 2026-09-14 | 2026-10-12 | 379 | 195d | 0d | Functional Managers IT [10%]; Functional Professionals IT [10%]; Functional Managers IN [10%]; Functional Professionals IN [10%]; ERP Expert IT [10%]; Business Analyst IT [10%]; ERP Professional IN [10%] | 112h | 12,960 |
| 381 | 2.4.5.2.5 | Obtain User Approval | 2w | 2026-10-12 | 2026-10-26 | 380 | 195d |  | Functional Managers IT [10%]; Functional Professionals IT [10%]; Functional Managers IN [10%]; Functional Professionals IN [10%]; ERP Expert IT [10%]; Business Analyst IT [10%]; ERP Professional IN [10%] | 56h | 6,480 |
| 382 | 2.4.5.3 | **Expenses** | 70d | 2026-07-20 | 2026-10-26 |  | 195d |  |  | 392h | 45,360 |
| 383 | 2.4.5.3.1 | Conduct integration tests | 3w | 2026-07-20 | 2026-08-10 | 291 | 195d | 0d | Functional Managers IT [10%]; Functional Professionals IT [10%]; Functional Managers IN [10%]; Functional Professionals IN [10%]; ERP Expert IT [10%]; Business Analyst IT [10%]; ERP Professional IN [10%] | 84h | 9,720 |
| 384 | 2.4.5.3.2 | Identify and resolve issues | 2w | 2026-08-10 | 2026-08-24 | 383 | 195d | 0d | Functional Managers IT [10%]; Functional Professionals IT [10%]; Functional Managers IN [10%]; Functional Professionals IN [10%]; ERP Expert IT [10%]; Business Analyst IT [10%]; ERP Professional IN [10%] | 56h | 6,480 |
| 385 | 2.4.5.3.3 | Data Migration Testing | 3w | 2026-08-24 | 2026-09-14 | 384 | 195d | 0d | Functional Managers IT [10%]; Functional Professionals IT [10%]; Functional Managers IN [10%]; Functional Professionals IN [10%]; ERP Expert IT [10%]; Business Analyst IT [10%]; ERP Professional IN [10%] | 84h | 9,720 |
| 386 | 2.4.5.3.4 | Conduct UAT test | 4w | 2026-09-14 | 2026-10-12 | 385 | 195d | 0d | Functional Managers IT [10%]; Functional Professionals IT [10%]; Functional Managers IN [10%]; Functional Professionals IN [10%]; ERP Expert IT [10%]; Business Analyst IT [10%]; ERP Professional IN [10%] | 112h | 12,960 |
| 387 | 2.4.5.3.5 | Obtain User Approval | 2w | 2026-10-12 | 2026-10-26 | 386 | 195d |  | Functional Managers IT [10%]; Functional Professionals IT [10%]; Functional Managers IN [10%]; Functional Professionals IN [10%]; ERP Expert IT [10%]; Business Analyst IT [10%]; ERP Professional IN [10%] | 56h | 6,480 |

| ID | WBS | Task | Duration | Start | Finish | Predecessors | Total slack | Free slack | Resources | Work | Cost |
| --- | --- | --- | --- | --- | --- | --- | --- | --- | --- | --- | --- |
| 388 | 2.4.6 | **Human Resources** | 70d | 2026-07-20 | 2026-10-26 |  | 0d |  |  | 1568h | 181,440 |
| 389 | 2.4.6.1 | **Recruitment** | 70d | 2026-07-20 | 2026-10-26 |  | 195d |  |  | 392h | 45,360 |
| 390 | 2.4.6.1.1 | Conduct integration tests | 3w | 2026-07-20 | 2026-08-10 | 291 | 195d | 0d | Functional Managers IT [10%]; Functional Professionals IT [10%]; Functional Managers IN [10%]; Functional Professionals IN [10%]; ERP Expert IT [10%]; Business Analyst IT [10%]; ERP Professional IN [10%] | 84h | 9,720 |
| 391 | 2.4.6.1.2 | Identify and resolve issues | 2w | 2026-08-10 | 2026-08-24 | 390 | 195d | 0d | Functional Managers IT [10%]; Functional Professionals IT [10%]; Functional Managers IN [10%]; Functional Professionals IN [10%]; ERP Expert IT [10%]; Business Analyst IT [10%]; ERP Professional IN [10%] | 56h | 6,480 |
| 392 | 2.4.6.1.3 | Data Migration Testing | 3w | 2026-08-24 | 2026-09-14 | 391 | 195d | 0d | Functional Managers IT [10%]; Functional Professionals IT [10%]; Functional Managers IN [10%]; Functional Professionals IN [10%]; ERP Expert IT [10%]; Business Analyst IT [10%]; ERP Professional IN [10%] | 84h | 9,720 |
| 393 | 2.4.6.1.4 | Conduct UAT test | 4w | 2026-09-14 | 2026-10-12 | 392 | 195d | 0d | Functional Managers IT [10%]; Functional Professionals IT [10%]; Functional Managers IN [10%]; Functional Professionals IN [10%]; ERP Expert IT [10%]; Business Analyst IT [10%]; ERP Professional IN [10%] | 112h | 12,960 |
| 394 | 2.4.6.1.5 | Obtain User Approval | 2w | 2026-10-12 | 2026-10-26 | 393 | 195d |  | Functional Managers IT [10%]; Functional Professionals IT [10%]; Functional Managers IN [10%]; Functional Professionals IN [10%]; ERP Expert IT [10%]; Business Analyst IT [10%]; ERP Professional IN [10%] | 56h | 6,480 |
| 395 | 2.4.6.2 | **Talent** | 70d | 2026-07-20 | 2026-10-26 |  | 195d |  |  | 392h | 45,360 |
| 396 | 2.4.6.2.1 | Conduct integration tests | 3w | 2026-07-20 | 2026-08-10 | 291 | 195d | 0d | Functional Managers IT [10%]; Functional Professionals IT [10%]; Functional Managers IN [10%]; Functional Professionals IN [10%]; ERP Expert IT [10%]; Business Analyst IT [10%]; ERP Professional IN [10%] | 84h | 9,720 |
| 397 | 2.4.6.2.2 | Identify and resolve issues | 2w | 2026-08-10 | 2026-08-24 | 396 | 195d | 0d | Functional Managers IT [10%]; Functional Professionals IT [10%]; Functional Managers IN [10%]; Functional Professionals IN [10%]; ERP Expert IT [10%]; Business Analyst IT [10%]; ERP Professional IN [10%] | 56h | 6,480 |
| 398 | 2.4.6.2.3 | Data Migration Testing | 3w | 2026-08-24 | 2026-09-14 | 397 | 195d | 0d | Functional Managers IT [10%]; Functional Professionals IT [10%]; Functional Managers IN [10%]; Functional Professionals IN [10%]; ERP Expert IT [10%]; Business Analyst IT [10%]; ERP Professional IN [10%] | 84h | 9,720 |
| 399 | 2.4.6.2.4 | Conduct UAT test | 4w | 2026-09-14 | 2026-10-12 | 398 | 195d | 0d | Functional Managers IT [10%]; Functional Professionals IT [10%]; Functional Managers IN [10%]; Functional Professionals IN [10%]; ERP Expert IT [10%]; Business Analyst IT [10%]; ERP Professional IN [10%] | 112h | 12,960 |
| 400 | 2.4.6.2.5 | Obtain User Approval | 2w | 2026-10-12 | 2026-10-26 | 399 | 195d |  | Functional Managers IT [10%]; Functional Professionals IT [10%]; Functional Managers IN [10%]; Functional Professionals IN [10%]; ERP Expert IT [10%]; Business Analyst IT [10%]; ERP Professional IN [10%] | 56h | 6,480 |
| 401 | 2.4.6.3 | **eLearning** | 70d | 2026-07-20 | 2026-10-26 |  | 195d |  |  | 392h | 45,360 |
| 402 | 2.4.6.3.1 | Conduct integration tests | 3w | 2026-07-20 | 2026-08-10 | 291 | 195d | 0d | Functional Managers IT [10%]; Functional Professionals IT [10%]; Functional Managers IN [10%]; Functional Professionals IN [10%]; ERP Expert IT [10%]; Business Analyst IT [10%]; ERP Professional IN [10%] | 84h | 9,720 |
| 403 | 2.4.6.3.2 | Identify and resolve issues | 2w | 2026-08-10 | 2026-08-24 | 402 | 195d | 0d | Functional Managers IT [10%]; Functional Professionals IT [10%]; Functional Managers IN [10%]; Functional Professionals IN [10%]; ERP Expert IT [10%]; Business Analyst IT [10%]; ERP Professional IN [10%] | 56h | 6,480 |
| 404 | 2.4.6.3.3 | Data Migration Testing | 3w | 2026-08-24 | 2026-09-14 | 403 | 195d | 0d | Functional Managers IT [10%]; Functional Professionals IT [10%]; Functional Managers IN [10%]; Functional Professionals IN [10%]; ERP Expert IT [10%]; Business Analyst IT [10%]; ERP Professional IN [10%] | 84h | 9,720 |
| 405 | 2.4.6.3.4 | Conduct UAT test | 4w | 2026-09-14 | 2026-10-12 | 404 | 195d | 0d | Functional Managers IT [10%]; Functional Professionals IT [10%]; Functional Managers IN [10%]; Functional Professionals IN [10%]; ERP Expert IT [10%]; Business Analyst IT [10%]; ERP Professional IN [10%] | 112h | 12,960 |
| 406 | 2.4.6.3.5 | Obtain User Approval | 2w | 2026-10-12 | 2026-10-26 | 405 | 195d |  | Functional Managers IT [10%]; Functional Professionals IT [10%]; Functional Managers IN [10%]; Functional Professionals IN [10%]; ERP Expert IT [10%]; Business Analyst IT [10%]; ERP Professional IN [10%] | 56h | 6,480 |
| 407 | 2.4.6.4 | **Payroll** | 70d | 2026-07-20 | 2026-10-26 |  | 0d |  |  | 392h | 45,360 |
| 408 | 2.4.6.4.1 | Conduct integration tests | 3w | 2026-07-20 | 2026-08-10 | 291 | 0d |  | Functional Managers IT [10%]; Functional Professionals IT [10%]; Functional Managers IN [10%]; Functional Professionals IN [10%]; ERP Expert IT [10%]; Business Analyst IT [10%]; ERP Professional IN [10%] | 84h | 9,720 |
| 409 | 2.4.6.4.2 | Identify and resolve issues | 2w | 2026-08-10 | 2026-08-24 | 408 | 0d |  | Functional Managers IT [10%]; Functional Professionals IT [10%]; Functional Managers IN [10%]; Functional Professionals IN [10%]; ERP Expert IT [10%]; Business Analyst IT [10%]; ERP Professional IN [10%] | 56h | 6,480 |
| 410 | 2.4.6.4.3 | Data Migration Testing | 3w | 2026-08-24 | 2026-09-14 | 409 | 0d |  | Functional Managers IT [10%]; Functional Professionals IT [10%]; Functional Managers IN [10%]; Functional Professionals IN [10%]; ERP Expert IT [10%]; Business Analyst IT [10%]; ERP Professional IN [10%] | 84h | 9,720 |
| 411 | 2.4.6.4.4 | Conduct UAT test | 4w | 2026-09-14 | 2026-10-12 | 410 | 0d |  | Functional Managers IT [10%]; Functional Professionals IT [10%]; Functional Managers IN [10%]; Functional Professionals IN [10%]; ERP Expert IT [10%]; Business Analyst IT [10%]; ERP Professional IN [10%] | 112h | 12,960 |
| 412 | 2.4.6.4.5 | Obtain User Approval | 2w | 2026-10-12 | 2026-10-26 | 411 | 0d |  | Functional Managers IT [10%]; Functional Professionals IT [10%]; Functional Managers IN [10%]; Functional Professionals IN [10%]; ERP Expert IT [10%]; Business Analyst IT [10%]; ERP Professional IN [10%] | 56h | 6,480 |

| ID | WBS | Task | Duration | Start | Finish | Predecessors | Total slack | Free slack | Resources | Work | Cost |
| --- | --- | --- | --- | --- | --- | --- | --- | --- | --- | --- | --- |
| 413 | 2.5 | **Deploy** | 45d | 2026-10-26 | 2026-12-28 |  | 0d |  |  | 4788h | 526,680 |
| 414 | 2.5.1 | **Commercial** | 45d | 2026-10-26 | 2026-12-28 |  | 150d |  |  | 504h | 55,440 |
| 415 | 2.5.1.1 | **CRM** | 45d | 2026-10-26 | 2026-12-28 |  | 150d |  |  | 252h | 27,720 |
| 416 | 2.5.1.1.1 | End-User Training | 3w | 2026-10-26 | 2026-11-16 | 412 | 150d | 0d | Functional Professionals IT [10%]; Functional Professionals IN [10%]; Human Resources IN [10%]; Information Technology IN [10%]; ERP Expert IT [10%]; Business Analyst IT [10%]; ERP Professional IN [10%] | 84h | 9,240 |
| 417 | 2.5.1.1.2 | deployment of Go/No Go results | 1w | 2026-11-16 | 2026-11-23 | 416 | 150d | 0d | Functional Professionals IT [10%]; Functional Professionals IN [10%]; Human Resources IN [10%]; Information Technology IN [10%]; ERP Expert IT [10%]; Business Analyst IT [10%]; ERP Professional IN [10%] | 28h | 3,080 |
| 418 | 2.5.1.1.3 | Launch ERP system | 1w | 2026-11-23 | 2026-11-30 | 417 | 150d | 0d | Functional Professionals IT [10%]; Functional Professionals IN [10%]; Human Resources IN [10%]; Information Technology IN [10%]; ERP Expert IT [10%]; Business Analyst IT [10%]; ERP Professional IN [10%] | 28h | 3,080 |
| 419 | 2.5.1.1.4 | Execute final data migration | 1mo | 2026-11-30 | 2026-12-28 | 418 | 150d |  | Functional Professionals IT [10%]; Functional Professionals IN [10%]; Human Resources IN [10%]; Information Technology IN [10%]; ERP Expert IT [10%]; Business Analyst IT [10%]; ERP Professional IN [10%] | 112h | 12,320 |
| 420 | 2.5.1.2 | **Sales** | 45d | 2026-10-26 | 2026-12-28 |  | 150d |  |  | 252h | 27,720 |
| 421 | 2.5.1.2.1 | End-User Training | 3w | 2026-10-26 | 2026-11-16 | 412 | 150d | 0d | Functional Professionals IT [10%]; Functional Professionals IN [10%]; Human Resources IN [10%]; Information Technology IN [10%]; ERP Expert IT [10%]; Business Analyst IT [10%]; ERP Professional IN [10%] | 84h | 9,240 |
| 422 | 2.5.1.2.2 | deployment of Go/No Go results | 1w | 2026-11-16 | 2026-11-23 | 421 | 150d | 0d | Functional Professionals IT [10%]; Functional Professionals IN [10%]; Human Resources IN [10%]; Information Technology IN [10%]; ERP Expert IT [10%]; Business Analyst IT [10%]; ERP Professional IN [10%] | 28h | 3,080 |
| 423 | 2.5.1.2.3 | Launch ERP system | 1w | 2026-11-23 | 2026-11-30 | 422 | 150d | 0d | Functional Professionals IT [10%]; Functional Professionals IN [10%]; Human Resources IN [10%]; Information Technology IN [10%]; ERP Expert IT [10%]; Business Analyst IT [10%]; ERP Professional IN [10%] | 28h | 3,080 |
| 424 | 2.5.1.2.4 | Execute final data migration | 1mo | 2026-11-30 | 2026-12-28 | 423 | 150d |  | Functional Professionals IT [10%]; Functional Professionals IN [10%]; Human Resources IN [10%]; Information Technology IN [10%]; ERP Expert IT [10%]; Business Analyst IT [10%]; ERP Professional IN [10%] | 112h | 12,320 |
| 425 | 2.5.2 | **Engineering** | 45d | 2026-10-26 | 2026-12-28 |  | 150d |  |  | 1260h | 138,600 |
| 426 | 2.5.2.1 | **Project** | 45d | 2026-10-26 | 2026-12-28 |  | 150d |  |  | 252h | 27,720 |
| 427 | 2.5.2.1.1 | End-User Training | 3w | 2026-10-26 | 2026-11-16 | 412 | 150d | 0d | Functional Professionals IT [10%]; Functional Professionals IN [10%]; Human Resources IN [10%]; Information Technology IN [10%]; ERP Expert IT [10%]; Business Analyst IT [10%]; ERP Professional IN [10%] | 84h | 9,240 |
| 428 | 2.5.2.1.2 | deployment of Go/No Go results | 1w | 2026-11-16 | 2026-11-23 | 427 | 150d | 0d | Functional Professionals IT [10%]; Functional Professionals IN [10%]; Human Resources IN [10%]; Information Technology IN [10%]; ERP Expert IT [10%]; Business Analyst IT [10%]; ERP Professional IN [10%] | 28h | 3,080 |
| 429 | 2.5.2.1.3 | Launch ERP system | 1w | 2026-11-23 | 2026-11-30 | 428 | 150d | 0d | Functional Professionals IT [10%]; Functional Professionals IN [10%]; Human Resources IN [10%]; Information Technology IN [10%]; ERP Expert IT [10%]; Business Analyst IT [10%]; ERP Professional IN [10%] | 28h | 3,080 |
| 430 | 2.5.2.1.4 | Execute final data migration | 1mo | 2026-11-30 | 2026-12-28 | 429 | 150d |  | Functional Professionals IT [10%]; Functional Professionals IN [10%]; Human Resources IN [10%]; Information Technology IN [10%]; ERP Expert IT [10%]; Business Analyst IT [10%]; ERP Professional IN [10%] | 112h | 12,320 |
| 431 | 2.5.2.2 | **Product Life-cyle Management** | 45d | 2026-10-26 | 2026-12-28 |  | 150d |  |  | 252h | 27,720 |
| 432 | 2.5.2.2.1 | End-User Training | 3w | 2026-10-26 | 2026-11-16 | 412 | 150d | 0d | Functional Professionals IT [10%]; Functional Professionals IN [10%]; Human Resources IN [10%]; Information Technology IN [10%]; ERP Expert IT [10%]; Business Analyst IT [10%]; ERP Professional IN [10%] | 84h | 9,240 |
| 433 | 2.5.2.2.2 | deployment of Go/No Go results | 1w | 2026-11-16 | 2026-11-23 | 432 | 150d | 0d | Functional Professionals IT [10%]; Functional Professionals IN [10%]; Human Resources IN [10%]; Information Technology IN [10%]; ERP Expert IT [10%]; Business Analyst IT [10%]; ERP Professional IN [10%] | 28h | 3,080 |
| 434 | 2.5.2.2.3 | Launch ERP system | 1w | 2026-11-23 | 2026-11-30 | 433 | 150d | 0d | Functional Professionals IT [10%]; Functional Professionals IN [10%]; Human Resources IN [10%]; Information Technology IN [10%]; ERP Expert IT [10%]; Business Analyst IT [10%]; ERP Professional IN [10%] | 28h | 3,080 |
| 435 | 2.5.2.2.4 | Execute final data migration | 1mo | 2026-11-30 | 2026-12-28 | 434 | 150d |  | Functional Professionals IT [10%]; Functional Professionals IN [10%]; Human Resources IN [10%]; Information Technology IN [10%]; ERP Expert IT [10%]; Business Analyst IT [10%]; ERP Professional IN [10%] | 112h | 12,320 |
| 436 | 2.5.2.3 | **Quality** | 45d | 2026-10-26 | 2026-12-28 |  | 150d |  |  | 252h | 27,720 |
| 437 | 2.5.2.3.1 | End-User Training | 3w | 2026-10-26 | 2026-11-16 | 412 | 150d | 0d | Functional Professionals IT [10%]; Functional Professionals IN [10%]; Human Resources IN [10%]; Information Technology IN [10%]; ERP Expert IT [10%]; Business Analyst IT [10%]; ERP Professional IN [10%] | 84h | 9,240 |
| 438 | 2.5.2.3.2 | deployment of Go/No Go results | 1w | 2026-11-16 | 2026-11-23 | 437 | 150d | 0d | Functional Professionals IT [10%]; Functional Professionals IN [10%]; Human Resources IN [10%]; Information Technology IN [10%]; ERP Expert IT [10%]; Business Analyst IT [10%]; ERP Professional IN [10%] | 28h | 3,080 |
| 439 | 2.5.2.3.3 | Launch ERP system | 1w | 2026-11-23 | 2026-11-30 | 438 | 150d | 0d | Functional Professionals IT [10%]; Functional Professionals IN [10%]; Human Resources IN [10%]; Information Technology IN [10%]; ERP Expert IT [10%]; Business Analyst IT [10%]; ERP Professional IN [10%] | 28h | 3,080 |
| 440 | 2.5.2.3.4 | Execute final data migration | 1mo | 2026-11-30 | 2026-12-28 | 439 | 150d |  | Functional Professionals IT [10%]; Functional Professionals IN [10%]; Human Resources IN [10%]; Information Technology IN [10%]; ERP Expert IT [10%]; Business Analyst IT [10%]; ERP Professional IN [10%] | 112h | 12,320 |

| ID | WBS | Task | Duration | Start | Finish | Predecessors | Total slack | Free slack | Resources | Work | Cost |
| --- | --- | --- | --- | --- | --- | --- | --- | --- | --- | --- | --- |
| 441 | 2.5.2.4 | **Timesheets** | 45d | 2026-10-26 | 2026-12-28 |  | 150d |  |  | 252h | 27,720 |
| 442 | 2.5.2.4.1 | End-User Training | 3w | 2026-10-26 | 2026-11-16 | 412 | 150d | 0d | Functional Professionals IT [10%]; Functional Professionals IN [10%]; Human Resources IN [10%]; Information Technology IN [10%]; ERP Expert IT [10%]; Business Analyst IT [10%]; ERP Professional IN [10%] | 84h | 9,240 |
| 443 | 2.5.2.4.2 | deployment of Go/No Go results | 1w | 2026-11-16 | 2026-11-23 | 442 | 150d | 0d | Functional Professionals IT [10%]; Functional Professionals IN [10%]; Human Resources IN [10%]; Information Technology IN [10%]; ERP Expert IT [10%]; Business Analyst IT [10%]; ERP Professional IN [10%] | 28h | 3,080 |
| 444 | 2.5.2.4.3 | Launch ERP system | 1w | 2026-11-23 | 2026-11-30 | 443 | 150d | 0d | Functional Professionals IT [10%]; Functional Professionals IN [10%]; Human Resources IN [10%]; Information Technology IN [10%]; ERP Expert IT [10%]; Business Analyst IT [10%]; ERP Professional IN [10%] | 28h | 3,080 |
| 445 | 2.5.2.4.4 | Execute final data migration | 1mo | 2026-11-30 | 2026-12-28 | 444 | 150d |  | Functional Professionals IT [10%]; Functional Professionals IN [10%]; Human Resources IN [10%]; Information Technology IN [10%]; ERP Expert IT [10%]; Business Analyst IT [10%]; ERP Professional IN [10%] | 112h | 12,320 |
| 446 | 2.5.2.5 | **Documents** | 45d | 2026-10-26 | 2026-12-28 |  | 150d |  |  | 252h | 27,720 |
| 447 | 2.5.2.5.1 | End-User Training | 3w | 2026-10-26 | 2026-11-16 | 412 | 150d | 0d | Functional Professionals IT [10%]; Functional Professionals IN [10%]; Human Resources IN [10%]; Information Technology IN [10%]; ERP Expert IT [10%]; Business Analyst IT [10%]; ERP Professional IN [10%] | 84h | 9,240 |
| 448 | 2.5.2.5.2 | deployment of Go/No Go results | 1w | 2026-11-16 | 2026-11-23 | 447 | 150d | 0d | Functional Professionals IT [10%]; Functional Professionals IN [10%]; Human Resources IN [10%]; Information Technology IN [10%]; ERP Expert IT [10%]; Business Analyst IT [10%]; ERP Professional IN [10%] | 28h | 3,080 |
| 449 | 2.5.2.5.3 | Launch ERP system | 1w | 2026-11-23 | 2026-11-30 | 448 | 150d | 0d | Functional Professionals IT [10%]; Functional Professionals IN [10%]; Human Resources IN [10%]; Information Technology IN [10%]; ERP Expert IT [10%]; Business Analyst IT [10%]; ERP Professional IN [10%] | 28h | 3,080 |
| 450 | 2.5.2.5.4 | Execute final data migration | 1mo | 2026-11-30 | 2026-12-28 | 449 | 150d |  | Functional Professionals IT [10%]; Functional Professionals IN [10%]; Human Resources IN [10%]; Information Technology IN [10%]; ERP Expert IT [10%]; Business Analyst IT [10%]; ERP Professional IN [10%] | 112h | 12,320 |
| 451 | 2.5.3 | **Manufacturing** | 45d | 2026-10-26 | 2026-12-28 |  | 150d |  |  | 1008h | 110,880 |
| 452 | 2.5.3.1 | **Production Planning and Materials Requirement** | 45d | 2026-10-26 | 2026-12-28 |  | 150d |  |  | 252h | 27,720 |
| 453 | 2.5.3.1.1 | End-User Training | 3w | 2026-10-26 | 2026-11-16 | 412 | 150d | 0d | Functional Professionals IT [10%]; Functional Professionals IN [10%]; Human Resources IN [10%]; Information Technology IN [10%]; ERP Expert IT [10%]; Business Analyst IT [10%]; ERP Professional IN [10%] | 84h | 9,240 |
| 454 | 2.5.3.1.2 | deployment of Go/No Go results | 1w | 2026-11-16 | 2026-11-23 | 453 | 150d | 0d | Functional Professionals IT [10%]; Functional Professionals IN [10%]; Human Resources IN [10%]; Information Technology IN [10%]; ERP Expert IT [10%]; Business Analyst IT [10%]; ERP Professional IN [10%] | 28h | 3,080 |
| 455 | 2.5.3.1.3 | Launch ERP system | 1w | 2026-11-23 | 2026-11-30 | 454 | 150d | 0d | Functional Professionals IT [10%]; Functional Professionals IN [10%]; Human Resources IN [10%]; Information Technology IN [10%]; ERP Expert IT [10%]; Business Analyst IT [10%]; ERP Professional IN [10%] | 28h | 3,080 |
| 456 | 2.5.3.1.4 | Execute final data migration | 1mo | 2026-11-30 | 2026-12-28 | 455 | 150d |  | Functional Professionals IT [10%]; Functional Professionals IN [10%]; Human Resources IN [10%]; Information Technology IN [10%]; ERP Expert IT [10%]; Business Analyst IT [10%]; ERP Professional IN [10%] | 112h | 12,320 |
| 457 | 2.5.3.2 | **Inventory** | 45d | 2026-10-26 | 2026-12-28 |  | 150d |  |  | 252h | 27,720 |
| 458 | 2.5.3.2.1 | End-User Training | 3w | 2026-10-26 | 2026-11-16 | 412 | 150d | 0d | Functional Professionals IT [10%]; Functional Professionals IN [10%]; Human Resources IN [10%]; Information Technology IN [10%]; ERP Expert IT [10%]; Business Analyst IT [10%]; ERP Professional IN [10%] | 84h | 9,240 |
| 459 | 2.5.3.2.2 | deployment of Go/No Go results | 1w | 2026-11-16 | 2026-11-23 | 458 | 150d | 0d | Functional Professionals IT [10%]; Functional Professionals IN [10%]; Human Resources IN [10%]; Information Technology IN [10%]; ERP Expert IT [10%]; Business Analyst IT [10%]; ERP Professional IN [10%] | 28h | 3,080 |
| 460 | 2.5.3.2.3 | Launch ERP system | 1w | 2026-11-23 | 2026-11-30 | 459 | 150d | 0d | Functional Professionals IT [10%]; Functional Professionals IN [10%]; Human Resources IN [10%]; Information Technology IN [10%]; ERP Expert IT [10%]; Business Analyst IT [10%]; ERP Professional IN [10%] | 28h | 3,080 |
| 461 | 2.5.3.2.4 | Execute final data migration | 1mo | 2026-11-30 | 2026-12-28 | 460 | 150d |  | Functional Professionals IT [10%]; Functional Professionals IN [10%]; Human Resources IN [10%]; Information Technology IN [10%]; ERP Expert IT [10%]; Business Analyst IT [10%]; ERP Professional IN [10%] | 112h | 12,320 |
| 462 | 2.5.3.3 | **Maintenance** | 45d | 2026-10-26 | 2026-12-28 |  | 150d |  |  | 252h | 27,720 |
| 463 | 2.5.3.3.1 | End-User Training | 3w | 2026-10-26 | 2026-11-16 | 412 | 150d | 0d | Functional Professionals IT [10%]; Functional Professionals IN [10%]; Human Resources IN [10%]; Information Technology IN [10%]; ERP Expert IT [10%]; Business Analyst IT [10%]; ERP Professional IN [10%] | 84h | 9,240 |
| 464 | 2.5.3.3.2 | deployment of Go/No Go results | 1w | 2026-11-16 | 2026-11-23 | 463 | 150d | 0d | Functional Professionals IT [10%]; Functional Professionals IN [10%]; Human Resources IN [10%]; Information Technology IN [10%]; ERP Expert IT [10%]; Business Analyst IT [10%]; ERP Professional IN [10%] | 28h | 3,080 |
| 465 | 2.5.3.3.3 | Launch ERP system | 1w | 2026-11-23 | 2026-11-30 | 464 | 150d | 0d | Functional Professionals IT [10%]; Functional Professionals IN [10%]; Human Resources IN [10%]; Information Technology IN [10%]; ERP Expert IT [10%]; Business Analyst IT [10%]; ERP Professional IN [10%] | 28h | 3,080 |
| 466 | 2.5.3.3.4 | Execute final data migration | 1mo | 2026-11-30 | 2026-12-28 | 465 | 150d |  | Functional Professionals IT [10%]; Functional Professionals IN [10%]; Human Resources IN [10%]; Information Technology IN [10%]; ERP Expert IT [10%]; Business Analyst IT [10%]; ERP Professional IN [10%] | 112h | 12,320 |

| ID | WBS | Task | Duration | Start | Finish | Predecessors | Total slack | Free slack | Resources | Work | Cost |
| --- | --- | --- | --- | --- | --- | --- | --- | --- | --- | --- | --- |
| 467 | 2.5.3.4 | **Industry 4.0 - MES integration** | 45d | 2026-10-26 | 2026-12-28 |  | 150d |  |  | 252h | 27,720 |
| 468 | 2.5.3.4.1 | End-User Training | 3w | 2026-10-26 | 2026-11-16 | 412 | 150d | 0d | Functional Professionals IT [10%]; Functional Professionals IN [10%]; Human Resources IN [10%]; Information Technology IN [10%]; ERP Expert IT [10%]; Business Analyst IT [10%]; ERP Professional IN [10%] | 84h | 9,240 |
| 469 | 2.5.3.4.2 | deployment of Go/No Go results | 1w | 2026-11-16 | 2026-11-23 | 468 | 150d | 0d | Functional Professionals IT [10%]; Functional Professionals IN [10%]; Human Resources IN [10%]; Information Technology IN [10%]; ERP Expert IT [10%]; Business Analyst IT [10%]; ERP Professional IN [10%] | 28h | 3,080 |
| 470 | 2.5.3.4.3 | Launch ERP system | 1w | 2026-11-23 | 2026-11-30 | 469 | 150d | 0d | Functional Professionals IT [10%]; Functional Professionals IN [10%]; Human Resources IN [10%]; Information Technology IN [10%]; ERP Expert IT [10%]; Business Analyst IT [10%]; ERP Professional IN [10%] | 28h | 3,080 |
| 471 | 2.5.3.4.4 | Execute final data migration | 1mo | 2026-11-30 | 2026-12-28 | 470 | 150d |  | Functional Professionals IT [10%]; Functional Professionals IN [10%]; Human Resources IN [10%]; Information Technology IN [10%]; ERP Expert IT [10%]; Business Analyst IT [10%]; ERP Professional IN [10%] | 112h | 12,320 |
| 472 | 2.5.4 | **Purchase** | 45d | 2026-10-26 | 2026-12-28 |  | 150d |  |  | 252h | 27,720 |
| 473 | 2.5.4.1 | **Purchase** | 45d | 2026-10-26 | 2026-12-28 |  | 150d |  |  | 252h | 27,720 |
| 474 | 2.5.4.1.1 | End-User Training | 3w | 2026-10-26 | 2026-11-16 | 412 | 150d | 0d | Functional Professionals IT [10%]; Functional Professionals IN [10%]; Human Resources IN [10%]; Information Technology IN [10%]; ERP Expert IT [10%]; Business Analyst IT [10%]; ERP Professional IN [10%] | 84h | 9,240 |
| 475 | 2.5.4.1.2 | deployment of Go/No Go results | 1w | 2026-11-16 | 2026-11-23 | 474 | 150d | 0d | Functional Professionals IT [10%]; Functional Professionals IN [10%]; Human Resources IN [10%]; Information Technology IN [10%]; ERP Expert IT [10%]; Business Analyst IT [10%]; ERP Professional IN [10%] | 28h | 3,080 |
| 476 | 2.5.4.1.3 | Launch ERP system | 1w | 2026-11-23 | 2026-11-30 | 475 | 150d | 0d | Functional Professionals IT [10%]; Functional Professionals IN [10%]; Human Resources IN [10%]; Information Technology IN [10%]; ERP Expert IT [10%]; Business Analyst IT [10%]; ERP Professional IN [10%] | 28h | 3,080 |
| 477 | 2.5.4.1.4 | Execute final data migration | 1mo | 2026-11-30 | 2026-12-28 | 476 | 150d |  | Functional Professionals IT [10%]; Functional Professionals IN [10%]; Human Resources IN [10%]; Information Technology IN [10%]; ERP Expert IT [10%]; Business Analyst IT [10%]; ERP Professional IN [10%] | 112h | 12,320 |
| 478 | 2.5.5 | **Administration** | 45d | 2026-10-26 | 2026-12-28 |  | 150d |  |  | 756h | 83,160 |
| 479 | 2.5.5.1 | **Invoicing** | 45d | 2026-10-26 | 2026-12-28 |  | 150d |  |  | 252h | 27,720 |
| 480 | 2.5.5.1.1 | End-User Training | 3w | 2026-10-26 | 2026-11-16 | 412 | 150d | 0d | Functional Professionals IT [10%]; Functional Professionals IN [10%]; Human Resources IN [10%]; Information Technology IN [10%]; ERP Expert IT [10%]; Business Analyst IT [10%]; ERP Professional IN [10%] | 84h | 9,240 |
| 481 | 2.5.5.1.2 | deployment of Go/No Go results | 1w | 2026-11-16 | 2026-11-23 | 480 | 150d | 0d | Functional Professionals IT [10%]; Functional Professionals IN [10%]; Human Resources IN [10%]; Information Technology IN [10%]; ERP Expert IT [10%]; Business Analyst IT [10%]; ERP Professional IN [10%] | 28h | 3,080 |
| 482 | 2.5.5.1.3 | Launch ERP system | 1w | 2026-11-23 | 2026-11-30 | 481 | 150d | 0d | Functional Professionals IT [10%]; Functional Professionals IN [10%]; Human Resources IN [10%]; Information Technology IN [10%]; ERP Expert IT [10%]; Business Analyst IT [10%]; ERP Professional IN [10%] | 28h | 3,080 |
| 483 | 2.5.5.1.4 | Execute final data migration | 1mo | 2026-11-30 | 2026-12-28 | 482 | 150d |  | Functional Professionals IT [10%]; Functional Professionals IN [10%]; Human Resources IN [10%]; Information Technology IN [10%]; ERP Expert IT [10%]; Business Analyst IT [10%]; ERP Professional IN [10%] | 112h | 12,320 |
| 484 | 2.5.5.2 | **Accounting** | 45d | 2026-10-26 | 2026-12-28 |  | 150d |  |  | 252h | 27,720 |
| 485 | 2.5.5.2.1 | End-User Training | 3w | 2026-10-26 | 2026-11-16 | 412 | 150d | 0d | Functional Professionals IT [10%]; Functional Professionals IN [10%]; Human Resources IN [10%]; Information Technology IN [10%]; ERP Expert IT [10%]; Business Analyst IT [10%]; ERP Professional IN [10%] | 84h | 9,240 |
| 486 | 2.5.5.2.2 | deployment of Go/No Go results | 1w | 2026-11-16 | 2026-11-23 | 485 | 150d | 0d | Functional Professionals IT [10%]; Functional Professionals IN [10%]; Human Resources IN [10%]; Information Technology IN [10%]; ERP Expert IT [10%]; Business Analyst IT [10%]; ERP Professional IN [10%] | 28h | 3,080 |
| 487 | 2.5.5.2.3 | Launch ERP system | 1w | 2026-11-23 | 2026-11-30 | 486 | 150d | 0d | Functional Professionals IT [10%]; Functional Professionals IN [10%]; Human Resources IN [10%]; Information Technology IN [10%]; ERP Expert IT [10%]; Business Analyst IT [10%]; ERP Professional IN [10%] | 28h | 3,080 |
| 488 | 2.5.5.2.4 | Execute final data migration | 1mo | 2026-11-30 | 2026-12-28 | 487 | 150d |  | Functional Professionals IT [10%]; Functional Professionals IN [10%]; Human Resources IN [10%]; Information Technology IN [10%]; ERP Expert IT [10%]; Business Analyst IT [10%]; ERP Professional IN [10%] | 112h | 12,320 |
| 489 | 2.5.5.3 | **Expenses** | 45d | 2026-10-26 | 2026-12-28 |  | 150d |  |  | 252h | 27,720 |
| 490 | 2.5.5.3.1 | End-User Training | 3w | 2026-10-26 | 2026-11-16 | 412 | 150d | 0d | Functional Professionals IT [10%]; Functional Professionals IN [10%]; Human Resources IN [10%]; Information Technology IN [10%]; ERP Expert IT [10%]; Business Analyst IT [10%]; ERP Professional IN [10%] | 84h | 9,240 |
| 491 | 2.5.5.3.2 | deployment of Go/No Go results | 1w | 2026-11-16 | 2026-11-23 | 490 | 150d | 0d | Functional Professionals IT [10%]; Functional Professionals IN [10%]; Human Resources IN [10%]; Information Technology IN [10%]; ERP Expert IT [10%]; Business Analyst IT [10%]; ERP Professional IN [10%] | 28h | 3,080 |
| 492 | 2.5.5.3.3 | Launch ERP system | 1w | 2026-11-23 | 2026-11-30 | 491 | 150d | 0d | Functional Professionals IT [10%]; Functional Professionals IN [10%]; Human Resources IN [10%]; Information Technology IN [10%]; ERP Expert IT [10%]; Business Analyst IT [10%]; ERP Professional IN [10%] | 28h | 3,080 |
| 493 | 2.5.5.3.4 | Execute final data migration | 1mo | 2026-11-30 | 2026-12-28 | 492 | 150d |  | Functional Professionals IT [10%]; Functional Professionals IN [10%]; Human Resources IN [10%]; Information Technology IN [10%]; ERP Expert IT [10%]; Business Analyst IT [10%]; ERP Professional IN [10%] | 112h | 12,320 |

| ID | WBS | Task | Duration | Start | Finish | Predecessors | Total slack | Free slack | Resources | Work | Cost |
| --- | --- | --- | --- | --- | --- | --- | --- | --- | --- | --- | --- |
| 494 | 2.5.6 | **Human Resources** | 45d | 2026-10-26 | 2026-12-28 |  | 0d |  |  | 1008h | 110,880 |
| 495 | 2.5.6.1 | **Recruitment** | 45d | 2026-10-26 | 2026-12-28 |  | 150d |  |  | 252h | 27,720 |
| 496 | 2.5.6.1.1 | End-User Training | 3w | 2026-10-26 | 2026-11-16 | 412 | 150d | 0d | Functional Professionals IT [10%]; Functional Professionals IN [10%]; Human Resources IN [10%]; Information Technology IN [10%]; ERP Expert IT [10%]; Business Analyst IT [10%]; ERP Professional IN [10%] | 84h | 9,240 |
| 497 | 2.5.6.1.2 | deployment of Go/No Go results | 1w | 2026-11-16 | 2026-11-23 | 496 | 150d | 0d | Functional Professionals IT [10%]; Functional Professionals IN [10%]; Human Resources IN [10%]; Information Technology IN [10%]; ERP Expert IT [10%]; Business Analyst IT [10%]; ERP Professional IN [10%] | 28h | 3,080 |
| 498 | 2.5.6.1.3 | Launch ERP system | 1w | 2026-11-23 | 2026-11-30 | 497 | 150d | 0d | Functional Professionals IT [10%]; Functional Professionals IN [10%]; Human Resources IN [10%]; Information Technology IN [10%]; ERP Expert IT [10%]; Business Analyst IT [10%]; ERP Professional IN [10%] | 28h | 3,080 |
| 499 | 2.5.6.1.4 | Execute final data migration | 1mo | 2026-11-30 | 2026-12-28 | 498 | 150d |  | Functional Professionals IT [10%]; Functional Professionals IN [10%]; Human Resources IN [10%]; Information Technology IN [10%]; ERP Expert IT [10%]; Business Analyst IT [10%]; ERP Professional IN [10%] | 112h | 12,320 |
| 500 | 2.5.6.2 | **Talent** | 45d | 2026-10-26 | 2026-12-28 |  | 150d |  |  | 252h | 27,720 |
| 501 | 2.5.6.2.1 | End-User Training | 3w | 2026-10-26 | 2026-11-16 | 412 | 150d | 0d | Functional Professionals IT [10%]; Functional Professionals IN [10%]; Human Resources IN [10%]; Information Technology IN [10%]; ERP Expert IT [10%]; Business Analyst IT [10%]; ERP Professional IN [10%] | 84h | 9,240 |
| 502 | 2.5.6.2.2 | deployment of Go/No Go results | 1w | 2026-11-16 | 2026-11-23 | 501 | 150d | 0d | Functional Professionals IT [10%]; Functional Professionals IN [10%]; Human Resources IN [10%]; Information Technology IN [10%]; ERP Expert IT [10%]; Business Analyst IT [10%]; ERP Professional IN [10%] | 28h | 3,080 |
| 503 | 2.5.6.2.3 | Launch ERP system | 1w | 2026-11-23 | 2026-11-30 | 502 | 150d | 0d | Functional Professionals IT [10%]; Functional Professionals IN [10%]; Human Resources IN [10%]; Information Technology IN [10%]; ERP Expert IT [10%]; Business Analyst IT [10%]; ERP Professional IN [10%] | 28h | 3,080 |
| 504 | 2.5.6.2.4 | Execute final data migration | 1mo | 2026-11-30 | 2026-12-28 | 503 | 150d |  | Functional Professionals IT [10%]; Functional Professionals IN [10%]; Human Resources IN [10%]; Information Technology IN [10%]; ERP Expert IT [10%]; Business Analyst IT [10%]; ERP Professional IN [10%] | 112h | 12,320 |
| 505 | 2.5.6.3 | **eLearning** | 45d | 2026-10-26 | 2026-12-28 |  | 150d |  |  | 252h | 27,720 |
| 506 | 2.5.6.3.1 | End-User Training | 3w | 2026-10-26 | 2026-11-16 | 412 | 150d | 0d | Functional Professionals IT [10%]; Functional Professionals IN [10%]; Human Resources IN [10%]; Information Technology IN [10%]; ERP Expert IT [10%]; Business Analyst IT [10%]; ERP Professional IN [10%] | 84h | 9,240 |
| 507 | 2.5.6.3.2 | deployment of Go/No Go results | 1w | 2026-11-16 | 2026-11-23 | 506 | 150d | 0d | Functional Professionals IT [10%]; Functional Professionals IN [10%]; Human Resources IN [10%]; Information Technology IN [10%]; ERP Expert IT [10%]; Business Analyst IT [10%]; ERP Professional IN [10%] | 28h | 3,080 |
| 508 | 2.5.6.3.3 | Launch ERP system | 1w | 2026-11-23 | 2026-11-30 | 507 | 150d | 0d | Functional Professionals IT [10%]; Functional Professionals IN [10%]; Human Resources IN [10%]; Information Technology IN [10%]; ERP Expert IT [10%]; Business Analyst IT [10%]; ERP Professional IN [10%] | 28h | 3,080 |
| 509 | 2.5.6.3.4 | Execute final data migration | 1mo | 2026-11-30 | 2026-12-28 | 508 | 150d |  | Functional Professionals IT [10%]; Functional Professionals IN [10%]; Human Resources IN [10%]; Information Technology IN [10%]; ERP Expert IT [10%]; Business Analyst IT [10%]; ERP Professional IN [10%] | 112h | 12,320 |
| 510 | 2.5.6.4 | **Payroll** | 45d | 2026-10-26 | 2026-12-28 |  | 0d |  |  | 252h | 27,720 |
| 511 | 2.5.6.4.1 | End-User Training | 3w | 2026-10-26 | 2026-11-16 | 412 | 0d |  | Functional Professionals IT [10%]; Functional Professionals IN [10%]; Human Resources IN [10%]; Information Technology IN [10%]; ERP Expert IT [10%]; Business Analyst IT [10%]; ERP Professional IN [10%] | 84h | 9,240 |
| 512 | 2.5.6.4.2 | deployment of Go/No Go results | 1w | 2026-11-16 | 2026-11-23 | 511 | 0d |  | Functional Professionals IT [10%]; Functional Professionals IN [10%]; Human Resources IN [10%]; Information Technology IN [10%]; ERP Expert IT [10%]; Business Analyst IT [10%]; ERP Professional IN [10%] | 28h | 3,080 |
| 513 | 2.5.6.4.3 | Launch ERP system | 1w | 2026-11-23 | 2026-11-30 | 512 | 0d |  | Functional Professionals IT [10%]; Functional Professionals IN [10%]; Human Resources IN [10%]; Information Technology IN [10%]; ERP Expert IT [10%]; Business Analyst IT [10%]; ERP Professional IN [10%] | 28h | 3,080 |
| 514 | 2.5.6.4.4 | Execute final data migration | 1mo | 2026-11-30 | 2026-12-28 | 513 | 0d |  | Functional Professionals IT [10%]; Functional Professionals IN [10%]; Human Resources IN [10%]; Information Technology IN [10%]; ERP Expert IT [10%]; Business Analyst IT [10%]; ERP Professional IN [10%] | 112h | 12,320 |
| 515 | 2.6 | **Run** | 30d | 2026-12-28 | 2027-02-08 |  | 0d |  |  | 1824h | 241,680 |
| 516 | 2.6.1 | **Commercial** | 30d | 2026-12-28 | 2027-02-08 |  | 120d |  |  | 192h | 25,440 |
| 517 | 2.6.1.1 | **CRM** | 30d | 2026-12-28 | 2027-02-08 |  | 120d |  |  | 96h | 12,720 |
| 518 | 2.6.1.1.1 | post-implementation feedback | 1mo | 2026-12-28 | 2027-01-25 | 514 | 120d | 0d | Information Technology IN [10%]; ERP Expert IT [10%]; Business Analyst IT [10%]; ERP Professional IN [10%] | 64h | 8,480 |
| 519 | 2.6.1.1.2 | conduct Support and Maintenance transition | 2w | 2027-01-25 | 2027-02-08 | 518 | 120d |  | Information Technology IN [10%]; ERP Expert IT [10%]; Business Analyst IT [10%]; ERP Professional IN [10%] | 32h | 4,240 |

| ID | WBS | Task | Duration | Start | Finish | Predecessors | Total slack | Free slack | Resources | Work | Cost |
| --- | --- | --- | --- | --- | --- | --- | --- | --- | --- | --- | --- |
| 520 | 2.6.1.2 | **Sales** | 30d | 2026-12-28 | 2027-02-08 |  | 120d |  |  | 96h | 12,720 |
| 521 | 2.6.1.2.1 | post-implementation feedback | 1mo | 2026-12-28 | 2027-01-25 | 514 | 120d | 0d | Information Technology IN [10%]; ERP Expert IT [10%]; Business Analyst IT [10%]; ERP Professional IN [10%] | 64h | 8,480 |
| 522 | 2.6.1.2.2 | conduct Support and Maintenance transition | 2w | 2027-01-25 | 2027-02-08 | 521 | 120d |  | Information Technology IN [10%]; ERP Expert IT [10%]; Business Analyst IT [10%]; ERP Professional IN [10%] | 32h | 4,240 |
| 523 | 2.6.2 | **Engineering** | 30d | 2026-12-28 | 2027-02-08 |  | 120d |  |  | 480h | 63,600 |
| 524 | 2.6.2.1 | **Project** | 30d | 2026-12-28 | 2027-02-08 |  | 120d |  |  | 96h | 12,720 |
| 525 | 2.6.2.1.1 | post-implementation feedback | 1mo | 2026-12-28 | 2027-01-25 | 514 | 120d | 0d | Information Technology IN [10%]; ERP Expert IT [10%]; Business Analyst IT [10%]; ERP Professional IN [10%] | 64h | 8,480 |
| 526 | 2.6.2.1.2 | conduct Support and Maintenance transition | 2w | 2027-01-25 | 2027-02-08 | 525 | 120d |  | Information Technology IN [10%]; ERP Expert IT [10%]; Business Analyst IT [10%]; ERP Professional IN [10%] | 32h | 4,240 |
| 527 | 2.6.2.2 | **Product Life-cyle Management** | 30d | 2026-12-28 | 2027-02-08 |  | 120d |  |  | 96h | 12,720 |
| 528 | 2.6.2.2.1 | post-implementation feedback | 1mo | 2026-12-28 | 2027-01-25 | 514 | 120d | 0d | Information Technology IN [10%]; ERP Expert IT [10%]; Business Analyst IT [10%]; ERP Professional IN [10%] | 64h | 8,480 |
| 529 | 2.6.2.2.2 | conduct Support and Maintenance transition | 2w | 2027-01-25 | 2027-02-08 | 528 | 120d |  | Information Technology IN [10%]; ERP Expert IT [10%]; Business Analyst IT [10%]; ERP Professional IN [10%] | 32h | 4,240 |
| 530 | 2.6.2.3 | **Quality** | 30d | 2026-12-28 | 2027-02-08 |  | 120d |  |  | 96h | 12,720 |
| 531 | 2.6.2.3.1 | post-implementation feedback | 1mo | 2026-12-28 | 2027-01-25 | 514 | 120d | 0d | Information Technology IN [10%]; ERP Expert IT [10%]; Business Analyst IT [10%]; ERP Professional IN [10%] | 64h | 8,480 |
| 532 | 2.6.2.3.2 | conduct Support and Maintenance transition | 2w | 2027-01-25 | 2027-02-08 | 531 | 120d |  | Information Technology IN [10%]; ERP Expert IT [10%]; Business Analyst IT [10%]; ERP Professional IN [10%] | 32h | 4,240 |
| 533 | 2.6.2.4 | **Timesheets** | 30d | 2026-12-28 | 2027-02-08 |  | 120d |  |  | 96h | 12,720 |
| 534 | 2.6.2.4.1 | post-implementation feedback | 1mo | 2026-12-28 | 2027-01-25 | 514 | 120d | 0d | Information Technology IN [10%]; ERP Expert IT [10%]; Business Analyst IT [10%]; ERP Professional IN [10%] | 64h | 8,480 |
| 535 | 2.6.2.4.2 | conduct Support and Maintenance transition | 2w | 2027-01-25 | 2027-02-08 | 534 | 120d |  | Information Technology IN [10%]; ERP Expert IT [10%]; Business Analyst IT [10%]; ERP Professional IN [10%] | 32h | 4,240 |
| 536 | 2.6.2.5 | **Documents** | 30d | 2026-12-28 | 2027-02-08 |  | 120d |  |  | 96h | 12,720 |
| 537 | 2.6.2.5.1 | post-implementation feedback | 1mo | 2026-12-28 | 2027-01-25 | 514 | 120d | 0d | Information Technology IN [10%]; ERP Expert IT [10%]; Business Analyst IT [10%]; ERP Professional IN [10%] | 64h | 8,480 |
| 538 | 2.6.2.5.2 | conduct Support and Maintenance transition | 2w | 2027-01-25 | 2027-02-08 | 537 | 120d |  | Information Technology IN [10%]; ERP Expert IT [10%]; Business Analyst IT [10%]; ERP Professional IN [10%] | 32h | 4,240 |
| 539 | 2.6.3 | **Manufacturing** | 30d | 2026-12-28 | 2027-02-08 |  | 120d |  |  | 384h | 50,880 |
| 540 | 2.6.3.1 | **Production Planning and Materials Requirement** | 30d | 2026-12-28 | 2027-02-08 |  | 120d |  |  | 96h | 12,720 |
| 541 | 2.6.3.1.1 | post-implementation feedback | 1mo | 2026-12-28 | 2027-01-25 | 514 | 120d | 0d | Information Technology IN [10%]; ERP Expert IT [10%]; Business Analyst IT [10%]; ERP Professional IN [10%] | 64h | 8,480 |
| 542 | 2.6.3.1.2 | conduct Support and Maintenance transition | 2w | 2027-01-25 | 2027-02-08 | 541 | 120d |  | Information Technology IN [10%]; ERP Expert IT [10%]; Business Analyst IT [10%]; ERP Professional IN [10%] | 32h | 4,240 |
| 543 | 2.6.3.2 | **Inventory** | 30d | 2026-12-28 | 2027-02-08 |  | 120d |  |  | 96h | 12,720 |
| 544 | 2.6.3.2.1 | post-implementation feedback | 1mo | 2026-12-28 | 2027-01-25 | 514 | 120d | 0d | Information Technology IN [10%]; ERP Expert IT [10%]; Business Analyst IT [10%]; ERP Professional IN [10%] | 64h | 8,480 |
| 545 | 2.6.3.2.2 | conduct Support and Maintenance transition | 2w | 2027-01-25 | 2027-02-08 | 544 | 120d |  | Information Technology IN [10%]; ERP Expert IT [10%]; Business Analyst IT [10%]; ERP Professional IN [10%] | 32h | 4,240 |

| ID | WBS | Task | Duration | Start | Finish | Predecessors | Total slack | Free slack | Resources | Work | Cost |
| --- | --- | --- | --- | --- | --- | --- | --- | --- | --- | --- | --- |
| 546 | 2.6.3.3 | **Maintenance** | 30d | 2026-12-28 | 2027-02-08 |  | 120d |  |  | 96h | 12,720 |
| 547 | 2.6.3.3.1 | post-implementation feedback | 1mo | 2026-12-28 | 2027-01-25 | 514 | 120d | 0d | Information Technology IN [10%]; ERP Expert IT [10%]; Business Analyst IT [10%]; ERP Professional IN [10%] | 64h | 8,480 |
| 548 | 2.6.3.3.2 | conduct Support and Maintenance transition | 2w | 2027-01-25 | 2027-02-08 | 547 | 120d |  | Information Technology IN [10%]; ERP Expert IT [10%]; Business Analyst IT [10%]; ERP Professional IN [10%] | 32h | 4,240 |
| 549 | 2.6.3.4 | **Industry 4.0 - MES integration** | 30d | 2026-12-28 | 2027-02-08 |  | 120d |  |  | 96h | 12,720 |
| 550 | 2.6.3.4.1 | post-implementation feedback | 1mo | 2026-12-28 | 2027-01-25 | 514 | 120d | 0d | Information Technology IN [10%]; ERP Expert IT [10%]; Business Analyst IT [10%]; ERP Professional IN [10%] | 64h | 8,480 |
| 551 | 2.6.3.4.2 | conduct Support and Maintenance transition | 2w | 2027-01-25 | 2027-02-08 | 550 | 120d |  | Information Technology IN [10%]; ERP Expert IT [10%]; Business Analyst IT [10%]; ERP Professional IN [10%] | 32h | 4,240 |
| 552 | 2.6.4 | **Purchase** | 30d | 2026-12-28 | 2027-02-08 |  | 120d |  |  | 96h | 12,720 |
| 553 | 2.6.4.1 | **Purchase** | 30d | 2026-12-28 | 2027-02-08 |  | 120d |  |  | 96h | 12,720 |
| 554 | 2.6.4.1.1 | post-implementation feedback | 1mo | 2026-12-28 | 2027-01-25 | 514 | 120d | 0d | Information Technology IN [10%]; ERP Expert IT [10%]; Business Analyst IT [10%]; ERP Professional IN [10%] | 64h | 8,480 |
| 555 | 2.6.4.1.2 | conduct Support and Maintenance transition | 2w | 2027-01-25 | 2027-02-08 | 554 | 120d |  | Information Technology IN [10%]; ERP Expert IT [10%]; Business Analyst IT [10%]; ERP Professional IN [10%] | 32h | 4,240 |
| 556 | 2.6.5 | **Administration** | 30d | 2026-12-28 | 2027-02-08 |  | 120d |  |  | 288h | 38,160 |
| 557 | 2.6.5.1 | **Invoicing** | 30d | 2026-12-28 | 2027-02-08 |  | 120d |  |  | 96h | 12,720 |
| 558 | 2.6.5.1.1 | post-implementation feedback | 1mo | 2026-12-28 | 2027-01-25 | 514 | 120d | 0d | Information Technology IN [10%]; ERP Expert IT [10%]; Business Analyst IT [10%]; ERP Professional IN [10%] | 64h | 8,480 |
| 559 | 2.6.5.1.2 | conduct Support and Maintenance transition | 2w | 2027-01-25 | 2027-02-08 | 558 | 120d |  | Information Technology IN [10%]; ERP Expert IT [10%]; Business Analyst IT [10%]; ERP Professional IN [10%] | 32h | 4,240 |
| 560 | 2.6.5.2 | **Accounting** | 30d | 2026-12-28 | 2027-02-08 |  | 120d |  |  | 96h | 12,720 |
| 561 | 2.6.5.2.1 | post-implementation feedback | 1mo | 2026-12-28 | 2027-01-25 | 514 | 120d | 0d | Information Technology IN [10%]; ERP Expert IT [10%]; Business Analyst IT [10%]; ERP Professional IN [10%] | 64h | 8,480 |
| 562 | 2.6.5.2.2 | conduct Support and Maintenance transition | 2w | 2027-01-25 | 2027-02-08 | 561 | 120d |  | Information Technology IN [10%]; ERP Expert IT [10%]; Business Analyst IT [10%]; ERP Professional IN [10%] | 32h | 4,240 |
| 563 | 2.6.5.3 | **Expenses** | 30d | 2026-12-28 | 2027-02-08 |  | 120d |  |  | 96h | 12,720 |
| 564 | 2.6.5.3.1 | post-implementation feedback | 1mo | 2026-12-28 | 2027-01-25 | 514 | 120d | 0d | Information Technology IN [10%]; ERP Expert IT [10%]; Business Analyst IT [10%]; ERP Professional IN [10%] | 64h | 8,480 |
| 565 | 2.6.5.3.2 | conduct Support and Maintenance transition | 2w | 2027-01-25 | 2027-02-08 | 564 | 120d |  | Information Technology IN [10%]; ERP Expert IT [10%]; Business Analyst IT [10%]; ERP Professional IN [10%] | 32h | 4,240 |
| 566 | 2.6.6 | **Human Resources** | 30d | 2026-12-28 | 2027-02-08 |  | 0d |  |  | 384h | 50,880 |
| 567 | 2.6.6.1 | **Recruitment** | 30d | 2026-12-28 | 2027-02-08 |  | 120d |  |  | 96h | 12,720 |
| 568 | 2.6.6.1.1 | post-implementation feedback | 1mo | 2026-12-28 | 2027-01-25 | 514 | 120d | 0d | Information Technology IN [10%]; ERP Expert IT [10%]; Business Analyst IT [10%]; ERP Professional IN [10%] | 64h | 8,480 |
| 569 | 2.6.6.1.2 | conduct Support and Maintenance transition | 2w | 2027-01-25 | 2027-02-08 | 568 | 120d |  | Information Technology IN [10%]; ERP Expert IT [10%]; Business Analyst IT [10%]; ERP Professional IN [10%] | 32h | 4,240 |

| ID | WBS | Task | Type | Duration | Start | Finish | Predecessors | Total slack | Free slack | Resources | Work | Cost |
| --- | --- | --- | --- | --- | --- | --- | --- | --- | --- | --- | --- | --- |
| 570 | 2.6.6.2 | **Talent** |  | 30d | 2026-12-28 | 2027-02-08 |  | 120d |  |  | 96h | 12,720 |
| 571 | 2.6.6.2.1 | post-implementation feedback |  | 1mo | 2026-12-28 | 2027-01-25 | 514 | 120d | 0d | Information Technology IN [10%]; ERP Expert IT [10%]; Business Analyst IT [10%]; ERP Professional IN [10%] | 64h | 8,480 |
| 572 | 2.6.6.2.2 | conduct Support and Maintenance transition |  | 2w | 2027-01-25 | 2027-02-08 | 571 | 120d |  | Information Technology IN [10%]; ERP Expert IT [10%]; Business Analyst IT [10%]; ERP Professional IN [10%] | 32h | 4,240 |
| 573 | 2.6.6.3 | **eLearning** |  | 30d | 2026-12-28 | 2027-02-08 |  | 120d |  |  | 96h | 12,720 |
| 574 | 2.6.6.3.1 | post-implementation feedback |  | 1mo | 2026-12-28 | 2027-01-25 | 514 | 120d | 0d | Information Technology IN [10%]; ERP Expert IT [10%]; Business Analyst IT [10%]; ERP Professional IN [10%] | 64h | 8,480 |
| 575 | 2.6.6.3.2 | conduct Support and Maintenance transition |  | 2w | 2027-01-25 | 2027-02-08 | 574 | 120d |  | Information Technology IN [10%]; ERP Expert IT [10%]; Business Analyst IT [10%]; ERP Professional IN [10%] | 32h | 4,240 |
| 576 | 2.6.6.4 | **Payroll** |  | 30d | 2026-12-28 | 2027-02-08 |  | 0d |  |  | 96h | 12,720 |
| 577 | 2.6.6.4.1 | post-implementation feedback |  | 1mo | 2026-12-28 | 2027-01-25 | 514 | 0d |  | Information Technology IN [10%]; ERP Expert IT [10%]; Business Analyst IT [10%]; ERP Professional IN [10%] | 64h | 8,480 |
| 578 | 2.6.6.4.2 | conduct Support and Maintenance transition |  | 2w | 2027-01-25 | 2027-02-08 | 577 | 0d |  | Information Technology IN [10%]; ERP Expert IT [10%]; Business Analyst IT [10%]; ERP Professional IN [10%] | 32h | 4,240 |
| 579 | 2.7 | Track Value Realization |  | 6mo | 2027-02-08 | 2027-07-26 | 578 | 0d |  |  |  |  |
| 580 | 2.8 | close project | milestone | 0d | 2025-08-14 | 2025-08-14 |  | 507.5d |  |  |  |  |
| 582 | 3 | **Matrix Structure** |  | 137d | 2024-01-01 | 2024-07-09 |  | 793.5d |  | OH3 | 9945.62h | 1,207,174.24 |
| 583 | 3.1 | **Initiation** |  | 26d | 2024-01-01 | 2024-02-05 |  | 793.5d |  |  | 1310.15h | 193,628.91 |
| 584 | 3.1.1 | identify needs for change |  | 5d | 2024-01-01 | 2024-01-05 |  | 793.5d | 0d | Change management specialist; Vice CEO [40%]; CTO; Financial Head; Manufacturing Head; HR Head; Project Manager/Director [300%]; Manufacturing Employee [400%]; Finance Employee [400%]; HR Employee IT [400%]; Technical Employee [400%]; Business Analyst IT [200%]; IT Specialist it | 234.95h | 27,228.91 |
| 585 | 3.1.2 | swot analysis |  | 7d | 2024-01-08 | 2024-01-16 | 584 | 793.5d | 0d | Change management specialist; Finance Employee; HR Employee IT; Manufacturing Employee; Technical Employee; Project Manager/Director; Business Analyst IT; Financial Head [30%]; CTO [30%] | 246.4h | 34,048 |
| 586 | 3.1.3 | develop a business case |  | 6d | 2024-01-17 | 2024-01-24 | 585 | 793.5d | 0d | Business Analyst IT; Finance Employee; Financial Head [40%]; Project Manager/Director; Change management specialist; HR Employee IT; HR Head [40%]; Technical Employee | 312.8h | 37,216 |
| 587 | 3.1.4 | identify key stakeholders |  | 5d | 2024-01-17 | 2024-01-23 | 585 | 794.5d | 1d | CTO; HR Head [60%]; Financial Head [60%]; Manufacturing Head; Vice CEO [50%]; Project Manager/Director; Change management specialist | 120h | 18,560 |
| 588 | 3.1.5 | having meeting with board of directors |  | 3d | 2024-01-25 | 2024-01-29 | 587, 586 | 793.5d | 0d | Project Manager/Director; CTO; Vice CEO; CEO IT; HR Head; Manufacturing Head; Financial Head; Change management specialist | 96h | 17,376 |
| 589 | 3.1.6 | obtain leadership approval |  | 5d | 2024-01-30 | 2024-02-05 | 588 | 793.5d | 0d | Project Manager/Director; Change management specialist; CTO; Vice CEO; CEO IT; HR Head; Manufacturing Head; Financial Head | 300h | 59,200 |
| 590 | 3.2 | **analysis and planning** |  | 22d | 2024-02-06 | 2024-03-06 |  | 793.5d |  |  | 1798.4h | 192,261.33 |
| 591 | 3.2.1 | Form a change team |  | 6d | 2024-02-06 | 2024-02-13 | 589 | 793.5d | 0d | Change management specialist; Vice CEO [40%]; CTO; Financial Head; Manufacturing Head; HR Head; Project Manager/Director [200%]; HR Employee IT [200%]; Finance Employee [200%]; Manufacturing Employee [200%] | 344h | 33,621.33 |
| 592 | 3.2.2 | Define roles and responisbilities in matrix structure |  | 10d | 2024-02-14 | 2024-02-27 | 591 | 793.5d | 0d | Change management specialist; Vice CEO [40%]; CTO; Financial Head; Manufacturing Head; HR Head; Project Manager/Director [200%]; HR Employee IT [200%]; Finance Employee [200%]; Manufacturing Employee [200%] | 640h | 64,960 |
| 593 | 3.2.3 | Impact Analysis of the change |  | 6d | 2024-02-28 | 2024-03-06 | 592 | 793.5d | 0d | Business Analyst IT; Vice CEO [40%]; Technical Employee [200%]; Finance Employee [200%]; Manufacturing Employee [200%]; HR Employee IT [200%]; Project Manager/Director [50%]; CEO IT [10%] | 185.6h | 24,656 |
| 594 | 3.2.4 | Analyze Potential Resistance to Change |  | 6d | 2024-02-28 | 2024-03-06 | 592 | 882.5d |  | Change management specialist; Vice CEO [20%]; CTO [40%]; Financial Head [40%]; Manufacturing Head [40%]; HR Head [40%]; Project Manager/Director [50%]; HR Employee IT; Finance Employee; Manufacturing Employee; Technical Employee | 268.8h | 28,608 |
| 595 | 3.2.5 | Identify Potential Integration Challenges |  | 6d | 2024-02-28 | 2024-03-06 | 592 | 882.5d |  | Change management specialist; CTO [40%]; Financial Head [40%]; Manufacturing Head [40%]; HR Head [40%]; Vice CEO [20%]; Project Manager/Director [50%]; HR Employee IT; Finance Employee; Manufacturing Employee; Technical Employee | 288h | 30,336 |
| 596 | 3.2.6 | Establish Governance Model forDecision-Making |  | 6d | 2024-02-28 | 2024-03-06 | 592 | 793.5d | 0d | Project Manager/Director; Change management specialist | 72h | 10,080 |

| ID | WBS | Task | Type | Duration | Start | Finish | Predecessors | Total slack | Free slack | Resources | Work | Cost |
| --- | --- | --- | --- | --- | --- | --- | --- | --- | --- | --- | --- | --- |
| 597 | 3.3 | **Design** |  | 17d | 2024-03-07 | 2024-03-29 |  | 793.5d |  |  | 1428.8h | 192,832 |
| 598 | 3.3.1 | Define Matrix Structure |  | 6d | 2024-03-07 | 2024-03-14 | 596, 593 | 793.5d | 0d | Project Manager/Director [200%]; Change management specialist [200%]; Vice CEO [40%]; CTO; Financial Head; Manufacturing Head; HR Head; HR Employee IT [200%]; Finance Employee [200%]; Manufacturing Employee [200%] | 595.2h | 77,280 |
| 599 | 3.3.2 | Identify dual Reporting Relationships |  | 6d | 2024-03-15 | 2024-03-22 | 598 | 793.5d | 0d | Change management specialist; Vice CEO [10%]; CTO [20%]; Financial Head [20%]; Manufacturing Head [20%]; HR Head [20%]; Project Manager/Director; HR Employee IT [60%]; Finance Employee [60%] | 167.2h | 21,648 |
| 600 | 3.3.3 | vision and guidelines development |  | 8d | 2024-03-15 | 2024-03-26 | 598 | 865.5d | 0d | Project Manager/Director [200%]; Change management specialist [200%]; Vice CEO [40%]; CTO [50%]; Financial Head [50%]; Manufacturing Head [50%]; HR Head [50%]; Finance Employee [20%]; Manufacturing Employee [200%] | 486.4h | 65,920 |
| 601 | 3.3.4 | Develop Performance Evaluation and Reward System |  | 3d | 2024-03-27 | 2024-03-29 | 599, 600 | 865.5d |  | Change management specialist [200%]; Project Manager/Director [200%]; CTO; Financial Head [50%]; Manufacturing Head; HR Head; Vice CEO; CEO IT [30%]; Finance Employee | 180h | 27,984 |
| 602 | 3.4 | **Communication and Training** |  | 37d | 2024-03-25 | 2024-05-14 |  | 793.5d |  |  | 2586.67h | 371,360 |
| 603 | 3.4.1 | Develop Communication Channels |  | 5d | 2024-03-25 | 2024-03-29 | 599 | 793.5d | 0d | IT Specialist it; Change management specialist [200%]; Project Manager/Director [200%]; Finance Employee; Financial Head [50%] | 160h | 22,000 |
| 604 | 3.4.2 | Conduct Awareness Sessions of the new changes and procedures |  | 20d | 2024-04-01 | 2024-04-26 | 603 | 793.5d | 0d | HR Employee IT [200%]; CEO IT [50%]; CTO [50%]; Financial Head [50%]; Manufacturing Head [50%]; HR Head [50%]; Finance Employee [200%]; Manufacturing Employee [50%]; Technical Employee; Vice CEO [30%]; Project Manager/Director; Change management specialist [200%] | 1194.67h | 176,800 |
| 605 | 3.4.3 | Develop Training Programs |  | 2d | 2024-04-01 | 2024-04-02 | 604SS | 793.5d | 0d | Project Manager/Director; Change management specialist | 32h | 4,320 |
| 606 | 3.4.4 | Implement Communication and Training |  | 30d | 2024-04-03 | 2024-05-14 | 605 | 793.5d | 0d | HR Employee IT [200%]; CEO IT [50%]; CTO [50%]; Financial Head [50%]; Manufacturing Head [50%]; HR Head [50%]; Finance Employee [200%]; Manufacturing Employee [50%]; Technical Employee; Vice CEO [30%]; Change management specialist [200%]; Project Manager/Director [200%] | 1200h | 168,240 |
| 607 | 3.5 | **Testing** |  | 17d | 2024-05-15 | 2024-06-06 |  | 793.5d |  |  | 464h | 61,632 |
| 608 | 3.5.1 | Conduct Pilot Testing in Select Departments or Teams |  | 6d | 2024-05-15 | 2024-05-22 | 606 | 793.5d | 0d | HR Employee IT; CTO [20%]; Financial Head [20%]; Manufacturing Head [20%]; Finance Employee; Manufacturing Employee; Technical Employee; Vice CEO [10%]; Change management specialist; Project Manager/Director | 134.4h | 18,384 |
| 609 | 3.5.2 | Gather Feedback and Assess Effectiveness |  | 5d | 2024-05-23 | 2024-05-29 | 608 | 793.5d | 0d | Project Manager/Director [200%]; Business Analyst IT; Change management specialist; HR Employee IT; Finance Employee | 200h | 24,000 |
| 610 | 3.5.3 | Make Iterative Adjustments Based on Feedback |  | 6d | 2024-05-30 | 2024-06-06 | 609 | 793.5d | 0d | CTO [50%]; Financial Head [50%]; Manufacturing Head [50%]; HR Head [50%]; Vice CEO [20%]; Project Manager/Director; Change management specialist | 129.6h | 19,248 |
| 611 | 3.6 | **Deployment (implementation)** |  | 12d | 2024-06-07 | 2024-06-24 |  | 793.5d |  |  | 784h | 96,456 |
| 612 | 3.6.1 | Execute Full-Scale Rollout of Matrix Structure |  | 6d | 2024-06-07 | 2024-06-14 | 610 | 810.5d |  | CTO [60%]; Financial Head [60%]; Manufacturing Head [60%]; HR Head [60%]; Vice CEO [20%]; Project Manager/Director; Change management specialist; Finance Employee; HR Employee IT; Manufacturing Employee | 288h | 34,752 |
| 613 | 3.6.2 | Monitor and Evaluate transition to matrix structure |  | 7d | 2024-06-07 | 2024-06-17 | 610 | 793.5d | 0d | CTO [20%]; Financial Head [20%]; Manufacturing Head [20%]; HR Head [20%]; Vice CEO [20%]; Project Manager/Director; Business Analyst IT; Manufacturing Employee; Finance Employee; HR Employee IT | 336h | 42,224 |
| 614 | 3.6.3 | Address Issues and Concerns ( Modify Implementation PlanasNeeded ) |  | 5d | 2024-06-18 | 2024-06-24 | 613 | 793.5d | 0d | CTO [60%]; Financial Head [60%]; Manufacturing Head [60%]; HR Head [60%]; Vice CEO [20%]; Project Manager/Director; Change management specialist; Finance Employee; HR Employee IT | 160h | 19,480 |
| 615 | 3.7 | **Post-Implementation and optimization** |  | 11d | 2024-06-25 | 2024-07-09 |  | 793.5d |  |  | 477.6h | 57,904 |
| 616 | 3.7.1 | Conduct Post-Implementation Review |  | 3d | 2024-06-25 | 2024-06-27 | 614 | 793.5d | 0d | CTO [30%]; Financial Head [30%]; Manufacturing Head [30%]; HR Head [30%]; Vice CEO [30%]; Project Manager/Director; Change management specialist; Finance Employee; HR Employee IT; CEO IT [10%] | 122.4h | 16,176 |
| 617 | 3.7.2 | Define Key Performance Indicators (KPIs) |  | 2d | 2024-06-28 | 2024-07-01 | 616 | 793.5d | 0d | Project Manager/Director; Business Analyst IT | 32h | 4,800 |
| 618 | 3.7.3 | Evaluate Performance |  | 4d | 2024-07-02 | 2024-07-05 | 617 | 793.5d | 0d | CTO [50%]; Financial Head [50%]; Manufacturing Head [50%]; HR Head [50%]; Vice CEO [40%]; Project Manager/Director [200%]; CEO IT [10%]; Change management specialist [200%]; Finance Employee [400%]; HR Employee IT [400%]; Manufacturing Employee [400%]; Technical Employee [400%] | 227.2h | 26,688 |
| 619 | 3.7.4 | Refine Processes Based on Performance Feedback |  | 2d | 2024-07-08 | 2024-07-09 | 618 | 793.5d |  | Project Manager/Director [200%]; HR Employee IT; Manufacturing Employee; Finance Employee; Technical Employee | 96h | 10,240 |
| 620 | 3.8 | CelebrateSuccess | milestone | 0d | 2024-01-01 | 2024-01-01 |  | 930.5d |  |  |  |  |
